| id | org_id | project_id | unit_id | unit_code | schedule_id | step_code | name | work_category | week | order | weight | day_from | day_to | planned_start | planned_finish | wait_days | min_photos | checklist | tasks | assignee_role | assigned_to | verify_role | verifier_hint | status | evidence | note | history | started_at | submitted_at | submitted_by | verified_at | verified_by | verify_note | rework_count | late_days | escalation_level | task_id | created_at | updated_at | predecessors | hold_point | hold_note | gate_reasons | wait_reason | handover_gate | gate_ready_at |
| --- | --- | --- | --- | --- | --- | --- | --- | --- | --- | --- | --- | --- | --- | --- | --- | --- | --- | --- | --- | --- | --- | --- | --- | --- | --- | --- | --- | --- | --- | --- | --- | --- | --- | --- | --- | --- | --- | --- | --- | --- | --- | --- | --- | --- | --- | --- |
| 91a77590-3726-4fe5-9b4b-8260c95a32e4 | org-sipro | 7c197935-db63-4ab3-a7e4-7396e2ed74a7 | bc5400ed-2533-42a9-a1b6-ba270f5e163e | A-01 | 1532b57e-fa1d-4809-bbd6-eca9c7d7d949 | W1-01 | Pekerjaan persiapan (pembersihan, pengukuran, bowplank) | persiapan | 1 | 1 | 2.0 | 1 | 2 | 2026-07-27 | 2026-07-28 | 0 | 2 | W1-01-C1 As bangunan sesuai siteplan True pass, W1-01-C2 Elevasi lantai aman dari jalan & drainase True pass, W1-01-C3 Bowplank kuat, siku, dan tidak mudah bergeser  pass | Pembersihan lokasi, Pengukuran, Pemasangan bowplank | site_engineer | site@sipro.co.id | project_manager | pm@sipro.co.id | done | 89f0de98-5ff6-430b-9bc4-bf56ddf96bad 2087f9d0f1ccb45c85b0399500e01be5f711d64c5fba01b996a15d7375e6f091 contoh-w1-01-1.png image/jpeg 10914 seed 2026-09-10T04:26:38.822672+00:00 CONTOH · unit A-01 · Contoh bukti: Pekerjaan persiapan (pembersihan, pengukuran (  seed 2026-09-10T04:26:38.823095+00:00, 52cdd303-4d93-4095-9da9-0f272e34edbf 148822ba3d40c36f15f1276c368f4d7f4625b59a57176374371f885c1378994a contoh-w1-01-2.png image/jpeg 11382 seed 2026-09-10T04:26:38.912910+00:00 CONTOH · unit A-01 · Contoh bukti: Pekerjaan persiapan (pembersihan, pengukuran (  seed 2026-09-10T04:26:38.913343+00:00 | Data awal demo: pekerjaan dikerjakan sesuai checklist mutu; foto bukti berlabel CONTOH. | 2026-07-28T09:30:00+00:00 submit site@sipro.co.id Seed data awal 2, 2026-07-28T09:30:00+00:00 verify pm@sipro.co.id Seed data awal | 2026-07-27T01:00:00+00:00 | 2026-07-28T09:30:00+00:00 | site@sipro.co.id | 2026-07-28T09:30:00+00:00 | pm@sipro.co.id | Diverifikasi pada penyiapan data awal. | 0 | 0 | 0 | c56aec88-c111-4d5b-b80e-221f90c9e76a | 2026-09-10T04:26:38.644799+00:00 | 2026-09-10T04:26:38.913355+00:00 |  |  |  |  |  |  |  |
| 2bcd4ef0-2d5b-4e47-9bee-5a50a16d7c54 | org-sipro | 7c197935-db63-4ab3-a7e4-7396e2ed74a7 | bc5400ed-2533-42a9-a1b6-ba270f5e163e | A-01 | 1532b57e-fa1d-4809-bbd6-eca9c7d7d949 | W1-02 | Pekerjaan tanah & pondasi (galian, urugan pasir, batu belah) | struktur | 1 | 2 | 8.0 | 3 | 7 | 2026-07-29 | 2026-08-03 | 0 | 3 | W1-02-C1 Kedalaman & lebar galian sesuai gambar True pass, W1-02-C2 Urugan pasir dipadatkan dan rata  pass, W1-02-C3 Pasangan batu belah terkunci penuh, spesi mengisi rongga True pass, W1-02-C4 Tidak ada bagian pondasi yang menggantung/ambles True pass | Galian pondasi, Urugan pasir, Pasangan batu belah | site_engineer | site@sipro.co.id | project_manager | pm@sipro.co.id | done | 7ee4200a-ac42-4b25-aaab-ea02f9d22890 417ca028cb60999276d45f71d0f497fe1eadec6f476b4da1b87fc6810cf7d584 contoh-w1-02-1.png image/jpeg 10841 seed 2026-09-10T04:26:38.936511+00:00 CONTOH · unit A-01 · Contoh bukti: Pekerjaan tanah & pondasi (galian, urugan pa (  seed 2026-09-10T04:26:38.936875+00:00, 6d92d71f-150b-483d-b1e4-30a58639c864 4ba3ce24937ee86be3d0ca42b6270d9f1c54b1a5b2d72f20ed92f0227261c986 contoh-w1-02-2.png image/jpeg 11332 seed 2026-09-10T04:26:39.021343+00:00 CONTOH · unit A-01 · Contoh bukti: Pekerjaan tanah & pondasi (galian, urugan pa (  seed 2026-09-10T04:26:39.021724+00:00, d57fab27-6aa1-4c70-adc4-b69d05f10956 803ae72abe0517fc38b74ff31efeddbc598586bc0f561d58be63bc6907980b0a contoh-w1-02-3.png image/jpeg 10956 seed 2026-09-10T04:26:39.044334+00:00 CONTOH · unit A-01 · Contoh bukti: Pekerjaan tanah & pondasi (galian, urugan pa (  seed 2026-09-10T04:26:39.112375+00:00 | Data awal demo: pekerjaan dikerjakan sesuai checklist mutu; foto bukti berlabel CONTOH. | 2026-08-03T09:30:00+00:00 submit site@sipro.co.id Seed data awal 3, 2026-08-03T09:30:00+00:00 verify pm@sipro.co.id Seed data awal | 2026-07-29T01:00:00+00:00 | 2026-08-03T09:30:00+00:00 | site@sipro.co.id | 2026-08-03T09:30:00+00:00 | pm@sipro.co.id | Diverifikasi pada penyiapan data awal. | 0 | 0 | 0 |  | 2026-09-10T04:26:38.644799+00:00 | 2026-09-10T04:26:39.112392+00:00 | W1-01 | True | HOLD POINT: tidak boleh lanjut sloof sebelum pondasi benar-benar terkunci (pasangan batu belah penuh, tidak ada rongga). | predecessor W1-01 'Pekerjaan persiapan (pembersihan, pengukuran, bowplank)' belum diverifikasi (status: blocked). |  |  |  |
| 818fb50a-b106-44a3-b23c-e10eb12ffa73 | org-sipro | 7c197935-db63-4ab3-a7e4-7396e2ed74a7 | bc5400ed-2533-42a9-a1b6-ba270f5e163e | A-01 | 1532b57e-fa1d-4809-bbd6-eca9c7d7d949 | W2-01 | Pembesian & bekisting sloof + kolom praktis | struktur | 2 | 3 | 6.0 | 8 | 10 | 2026-08-04 | 2026-08-06 | 2 | 3 | W2-01-C1 Diameter & jumlah besi sesuai gambar True pass, W2-01-C2 Beton decking (selimut beton) terpasang True pass, W2-01-C3 Bekisting kokoh, lurus, tidak bocor  pass | Pembesian sloof, Pembesian kolom praktis, Pemasangan bekisting | site_engineer | site@sipro.co.id | project_manager | pm@sipro.co.id | done | 66585701-b502-41d9-bf65-0159d8c09c62 1e33a19ca1372d4a6729f8c10674dbcfec64bad7e046ff449c5e28c06438f3bb contoh-w2-01-1.png image/jpeg 10898 seed 2026-09-10T04:26:39.135744+00:00 CONTOH · unit A-01 · Contoh bukti: Pembesian & bekisting sloof + kolom praktis (1  seed 2026-09-10T04:26:39.136119+00:00, c33fbc01-7ef3-4250-ab61-1c8a2b7512d7 2f8dd805863853432fd9ca8c107d24d5cda11a6810a793c81375b9ab502c6b3e contoh-w2-01-2.png image/jpeg 11381 seed 2026-09-10T04:26:39.224336+00:00 CONTOH · unit A-01 · Contoh bukti: Pembesian & bekisting sloof + kolom praktis (2  seed 2026-09-10T04:26:39.224707+00:00, 8dc0cf63-ee25-41ec-a959-abdb7c57c354 69e0660d6247a2e1e9fed5b838e3b173a1f6195f71218ddd8f4b0ee9c09b42cc contoh-w2-01-3.png image/jpeg 11008 seed 2026-09-10T04:26:39.246957+00:00 CONTOH · unit A-01 · Contoh bukti: Pembesian & bekisting sloof + kolom praktis (3  seed 2026-09-10T04:26:39.247302+00:00 | Data awal demo: pekerjaan dikerjakan sesuai checklist mutu; foto bukti berlabel CONTOH. | 2026-08-06T09:30:00+00:00 submit site@sipro.co.id Seed data awal 3, 2026-08-06T09:30:00+00:00 verify pm@sipro.co.id Seed data awal | 2026-08-04T01:00:00+00:00 | 2026-08-06T09:30:00+00:00 | site@sipro.co.id | 2026-08-06T09:30:00+00:00 | pm@sipro.co.id | Diverifikasi pada penyiapan data awal. | 0 | 0 | 0 |  | 2026-09-10T04:26:38.644799+00:00 | 2026-09-10T04:26:39.247313+00:00 | W1-02 |  |  | predecessor W1-02 'Pekerjaan tanah & pondasi (galian, urugan pasir, batu belah)' belum diverifikasi (status: blocked). | Pondasi batu kali minimal 1–2 hari sebelum sloof dikerjakan |  |  |
| 1039472d-ad12-474c-8a5a-a64ca5179eda | org-sipro | 7c197935-db63-4ab3-a7e4-7396e2ed74a7 | bc5400ed-2533-42a9-a1b6-ba270f5e163e | A-01 | 1532b57e-fa1d-4809-bbd6-eca9c7d7d949 | W2-02 | Pengecoran sloof, kolom praktis & talang beton | struktur | 2 | 4 | 6.0 | 11 | 11 | 2026-08-07 | 2026-08-07 | 0 | 2 | W2-02-C1 Mutu/slump beton sesuai spesifikasi True pass, W2-02-C2 Pengecoran padat, tidak keropos/segregasi True pass, W2-02-C3 Tanggal & jam pengecoran dicatat True pass | Pengecoran sloof, Pengecoran kolom praktis, Talang beton | site_engineer | site@sipro.co.id | project_manager | pm@sipro.co.id | done | 5f29aae5-2888-41fc-9775-8ae728dd8e5e 45545fabbf831068bebc3010d2da1ade27b96ba66012d9df82c6c25134518f93 contoh-w2-02-1.png image/jpeg 10760 seed 2026-09-10T04:26:39.327963+00:00 CONTOH · unit A-01 · Contoh bukti: Pengecoran sloof, kolom praktis & talang bet (  seed 2026-09-10T04:26:39.328395+00:00, d5904653-9666-4096-a4da-b0f5b51cb3c5 84b0d0da3a349b9a50ca79f5fdabad10e3b45486013ad8e629a0c2180a2a4119 contoh-w2-02-2.png image/jpeg 11255 seed 2026-09-10T04:26:39.415309+00:00 CONTOH · unit A-01 · Contoh bukti: Pengecoran sloof, kolom praktis & talang bet (  seed 2026-09-10T04:26:39.415672+00:00 | Data awal demo: pekerjaan dikerjakan sesuai checklist mutu; foto bukti berlabel CONTOH. | 2026-08-07T09:30:00+00:00 submit site@sipro.co.id Seed data awal 2, 2026-08-07T09:30:00+00:00 verify pm@sipro.co.id Seed data awal | 2026-08-07T01:00:00+00:00 | 2026-08-07T09:30:00+00:00 | site@sipro.co.id | 2026-08-07T09:30:00+00:00 | pm@sipro.co.id | Diverifikasi pada penyiapan data awal. | 0 | 0 | 0 |  | 2026-09-10T04:26:38.644799+00:00 | 2026-09-10T04:26:39.415682+00:00 | W2-01 |  |  | predecessor W2-01 'Pembesian & bekisting sloof + kolom praktis' belum diverifikasi (status: blocked). |  |  |  |
| 8c2685be-0386-418c-90c7-1a518b4b6694 | org-sipro | 7c197935-db63-4ab3-a7e4-7396e2ed74a7 | bc5400ed-2533-42a9-a1b6-ba270f5e163e | A-01 | 1532b57e-fa1d-4809-bbd6-eca9c7d7d949 | W2-03 | Curing beton & pembongkaran bekisting | struktur | 2 | 5 | 3.0 | 12 | 14 | 2026-08-08 | 2026-08-11 | 1 | 2 | W2-03-C1 Curing disiram/ditutup minimal 7 hari True pass, W2-03-C2 Tidak ada retak susut besar / keropos True pass, W2-03-C3 Tanggal pembongkaran bekisting dicatat  pass | Perawatan beton (curing), Buka bekisting samping | site_engineer | site@sipro.co.id | project_manager | pm@sipro.co.id | done | 85b21aae-f02c-485d-aeec-fd0f17ebcc31 cb4e3b61332882372fee6f7051495431403e877996874d3ae1462a67c4fa3b9b contoh-w2-03-1.png image/jpeg 10778 seed 2026-09-10T04:26:39.437836+00:00 CONTOH · unit A-01 · Contoh bukti: Curing beton & pembongkaran bekisting (1)  seed 2026-09-10T04:26:39.438172+00:00, 47461f2e-14ed-4031-8ca8-036b495bb956 6e054e1e582e2fc2d994575f0d8d0bbac1b7df3c7e09022a4f045f64f2b69942 contoh-w2-03-2.png image/jpeg 11289 seed 2026-09-10T04:26:39.520273+00:00 CONTOH · unit A-01 · Contoh bukti: Curing beton & pembongkaran bekisting (2)  seed 2026-09-10T04:26:39.520723+00:00 | Data awal demo: pekerjaan dikerjakan sesuai checklist mutu; foto bukti berlabel CONTOH. | 2026-08-11T09:30:00+00:00 submit site@sipro.co.id Seed data awal 2, 2026-08-11T09:30:00+00:00 verify pm@sipro.co.id Seed data awal | 2026-08-08T01:00:00+00:00 | 2026-08-11T09:30:00+00:00 | site@sipro.co.id | 2026-08-11T09:30:00+00:00 | pm@sipro.co.id | Diverifikasi pada penyiapan data awal. | 0 | 0 | 0 |  | 2026-09-10T04:26:38.644799+00:00 | 2026-09-10T04:26:39.520732+00:00 | W2-02 | True | HOLD POINT: bekisting jangan dibuka/dibebani terlalu cepat — samping 24 jam, beban berat 7 hari, kuat optimal 28 hari. | predecessor W2-02 'Pengecoran sloof, kolom praktis & talang beton' belum diverifikasi (status: blocked). | Bekisting samping minimal 24 jam setelah pengecoran |  |  |
| 30453832-5c87-47ba-b088-19265f7c25c3 | org-sipro | 7c197935-db63-4ab3-a7e4-7396e2ed74a7 | bc5400ed-2533-42a9-a1b6-ba270f5e163e | A-01 | 1532b57e-fa1d-4809-bbd6-eca9c7d7d949 | W3-01 | Pasangan dinding bata merah | arsitektur | 3 | 6 | 8.0 | 15 | 21 | 2026-08-12 | 2026-08-19 | 3 | 3 | W3-01-C1 Pasangan tegak, lurus, dan siku True pass, W3-01-C2 Spesi terisi penuh (tidak ada rongga) True pass, W3-01-C3 Angkur kolom praktis terpasang tiap 6 lapis  pass | Pasangan bata merah, Kolom praktis lanjutan | site_engineer | site@sipro.co.id | project_manager | pm@sipro.co.id | done | 7ce91c91-8c07-42ba-9e91-bd10cfdeecf4 124534d0a12ae05a50d84132ccc8f0c8571572e7c0a74205c6764d7f27508c90 contoh-w3-01-1.png image/jpeg 9897 seed 2026-09-10T04:26:39.542863+00:00 CONTOH · unit A-01 · Contoh bukti: Pasangan dinding bata merah (1)  seed 2026-09-10T04:26:39.612358+00:00, 020f3384-bed3-4c04-bbb4-77d94e8b1e44 c6c761457ace845a854ecdb6af3300692dacdff208c50b3f67334ac00e8963d8 contoh-w3-01-2.png image/jpeg 10403 seed 2026-09-10T04:26:39.634095+00:00 CONTOH · unit A-01 · Contoh bukti: Pasangan dinding bata merah (2)  seed 2026-09-10T04:26:39.634613+00:00, 442512e9-d959-4eac-b3c5-76118db34f31 67aaa3da9c48ba70ea42f2f222dcbab3f197dc439f0dd31df2215d864eb6e222 contoh-w3-01-3.png image/jpeg 10018 seed 2026-09-10T04:26:39.715901+00:00 CONTOH · unit A-01 · Contoh bukti: Pasangan dinding bata merah (3)  seed 2026-09-10T04:26:39.716369+00:00 | Data awal demo: pekerjaan dikerjakan sesuai checklist mutu; foto bukti berlabel CONTOH. | 2026-08-19T09:30:00+00:00 submit site@sipro.co.id Seed data awal 3, 2026-08-19T09:30:00+00:00 verify pm@sipro.co.id Seed data awal | 2026-08-12T01:00:00+00:00 | 2026-08-19T09:30:00+00:00 | site@sipro.co.id | 2026-08-19T09:30:00+00:00 | pm@sipro.co.id | Diverifikasi pada penyiapan data awal. | 0 | 0 | 0 |  | 2026-09-10T04:26:38.644799+00:00 | 2026-09-10T04:26:39.716384+00:00 | W2-03 |  |  | predecessor W2-03 'Curing beton & pembongkaran bekisting' belum diverifikasi (status: blocked). | Cor sloof minimal 3–7 hari sebelum pasangan bata dimulai |  |  |
| 3ac02124-f9d0-40b5-b6d5-45fb39d4240a | org-sipro | 7c197935-db63-4ab3-a7e4-7396e2ed74a7 | bc5400ed-2533-42a9-a1b6-ba270f5e163e | A-01 | 1532b57e-fa1d-4809-bbd6-eca9c7d7d949 | W3-02 | Jalur plumbing & conduit listrik tanam (sebelum plester) | mep | 3 | 7 | 4.0 | 15 | 21 | 2026-08-12 | 2026-08-19 | 0 | 3 | W3-02-C1 Jalur air diuji tekan tanpa kebocoran True pass, W3-02-C2 Conduit utuh, tidak tertekuk/pecah True pass, W3-02-C3 Foto as-built jalur diambil sebelum ditutup True pass | Jalur air bersih & kotor tanam, Conduit listrik tanam | site_engineer | site@sipro.co.id | project_manager | pm@sipro.co.id | submitted | a9caed0e-e3bc-4c60-8a07-728a0dd4dfd2 10e9b30345275f1c6a81626d97c634aa4c49d302d8bac8fe39e19e0227a65e3f contoh-w3-02-1.png image/jpeg 10848 seed 2026-09-10T04:26:39.739087+00:00 CONTOH · unit A-01 · Contoh bukti: Jalur plumbing & conduit listrik tanam (sebe (  seed 2026-09-10T04:26:39.739505+00:00, 591cec0e-3732-45bd-ba9b-f60e464c0626 33e67a4bb734a6aafd7f4ce765a224ce82fd959d8379dc9e95461961248bddbe contoh-w3-02-2.png image/jpeg 11345 seed 2026-09-10T04:26:39.823415+00:00 CONTOH · unit A-01 · Contoh bukti: Jalur plumbing & conduit listrik tanam (sebe (  seed 2026-09-10T04:26:39.823853+00:00, 00d6f3d5-097a-4fce-9f02-06d8041a0a13 cd5a90eab462e6a2cf5c94f2270c67627e338574fdaf72aca0ad0fe1d9ac12c0 contoh-w3-02-3.png image/jpeg 10948 seed 2026-09-10T04:26:39.845823+00:00 CONTOH · unit A-01 · Contoh bukti: Jalur plumbing & conduit listrik tanam (sebe (  seed 2026-09-10T04:26:39.846254+00:00 | Data awal demo: pekerjaan dikerjakan sesuai checklist mutu; foto bukti berlabel CONTOH. | 2026-08-19T09:30:00+00:00 submit site@sipro.co.id Seed data awal 3 | 2026-08-12T01:00:00+00:00 | 2026-08-19T09:30:00+00:00 | site@sipro.co.id |  |  |  | 0 | 0 | 0 |  | 2026-09-10T04:26:38.644799+00:00 | 2026-09-10T04:26:39.846268+00:00 | W3-01 | True | HOLD POINT: jangan plester sebelum jalur plumbing & conduit tanam selesai, diuji, dan difoto sebagai as-built. | predecessor W3-01 'Pasangan dinding bata merah' belum diverifikasi (status: blocked). |  |  |  |
| 2c17833e-efbd-422f-8a21-b36916c7e91a | org-sipro | 7c197935-db63-4ab3-a7e4-7396e2ed74a7 | bc5400ed-2533-42a9-a1b6-ba270f5e163e | A-01 | 1532b57e-fa1d-4809-bbd6-eca9c7d7d949 | W4-01 | Ring balok & ring gevel | struktur | 4 | 8 | 6.0 | 22 | 24 | 2026-08-20 | 2026-08-22 | 0 | 2 | W4-01-C1 Pembesian ring balk sesuai gambar True pending, W4-01-C2 Pengecoran padat & elevasi rata True pending, W4-01-C3 Angkur kuda-kuda disiapkan  pending | Pembesian & bekisting ring balk, Pengecoran ring balk, Ring gevel | site_engineer | site@sipro.co.id | project_manager | pm@sipro.co.id | blocked |  |  |  |  |  |  |  |  |  | 0 | 0 | 0 |  | 2026-09-10T04:26:38.644799+00:00 | 2026-09-10T04:26:39.848258+00:00 | W3-01, W3-02 |  |  | predecessor W3-02 'Jalur plumbing & conduit listrik tanam (sebelum plester)' belum diverifikasi (status: submitted). |  |  |  |
| 7f116134-9601-4d34-9a8b-b2ffea4a6a87 | org-sipro | 7c197935-db63-4ab3-a7e4-7396e2ed74a7 | bc5400ed-2533-42a9-a1b6-ba270f5e163e | A-01 | 1532b57e-fa1d-4809-bbd6-eca9c7d7d949 | W4-02 | Rangka atap baja ringan, penutup atap, lisplank | arsitektur | 4 | 9 | 8.0 | 25 | 27 | 2026-08-24 | 2026-08-26 | 3 | 4 | W4-02-C1 Jarak kuda-kuda & reng sesuai spesifikasi True pending, W4-02-C2 Sambungan/screw lengkap dan kencang  pending, W4-02-C3 Tes siram air: tidak ada kebocoran True pending, W4-02-C4 Kemiringan talang mengalir, tidak menggenang True pending | Rangka atap baja ringan, Genteng metal / atap spandek, Lisplank | site_engineer | site@sipro.co.id | project_manager | pm@sipro.co.id | blocked |  |  |  |  |  |  |  |  |  | 0 | 0 | 0 |  | 2026-09-10T04:26:38.644799+00:00 | 2026-09-10T04:26:38.721386+00:00 | W4-01 | True | HOLD POINT: jangan lanjut plafon bila atap masih bocor — wajib TES SIRAM AIR dan cek kemiringan talang. | predecessor W4-01 'Ring balok & ring gevel' belum diverifikasi (status: blocked). | Ring balok perlu mengeras minimal 3 hari sebelum dibebani rangka atap |  |  |
| 93dd38d2-5e66-4b20-af96-0de75ce867c8 | org-sipro | 7c197935-db63-4ab3-a7e4-7396e2ed74a7 | bc5400ed-2533-42a9-a1b6-ba270f5e163e | A-01 | 1532b57e-fa1d-4809-bbd6-eca9c7d7d949 | W5-01 | Plester dinding | arsitektur | 5 | 10 | 6.0 | 28 | 32 | 2026-08-27 | 2026-09-01 | 3 | 3 | W5-01-C1 Permukaan rata, tegak, tidak bergelombang True pending, W5-01-C2 Sudut siku dan tajam  pending, W5-01-C3 Tidak ada bagian kosong/berongga saat diketuk True pending | Plester dinding dalam, Plester dinding luar | site_engineer | site@sipro.co.id | project_manager | pm@sipro.co.id | blocked |  |  |  |  |  |  |  |  |  | 0 | 0 | 0 |  | 2026-09-10T04:26:38.644799+00:00 | 2026-09-10T04:26:39.848726+00:00 | W3-02, W4-02 |  |  | predecessor W3-02 'Jalur plumbing & conduit listrik tanam (sebelum plester)' belum diverifikasi (status: submitted)., predecessor W4-02 'Rangka atap baja ringan, penutup atap, lisplank' belum diverifikasi (status: blocked). | Mortar bata harus stabil 3–5 hari agar plester tidak retak rambut |  |  |
| 31361584-db51-4def-8ea9-44b245b0f139 | org-sipro | 7c197935-db63-4ab3-a7e4-7396e2ed74a7 | bc5400ed-2533-42a9-a1b6-ba270f5e163e | A-01 | 1532b57e-fa1d-4809-bbd6-eca9c7d7d949 | W5-02 | Acian dinding | arsitektur | 5 | 11 | 4.0 | 33 | 35 | 2026-09-02 | 2026-09-04 | 3 | 2 | W5-02-C1 Acian halus, tanpa retak rambut True pending, W5-02-C2 Tidak ada bagian mengelupas / berdebu  pending | Acian dinding dalam, Acian dinding luar | site_engineer | site@sipro.co.id | project_manager | pm@sipro.co.id | blocked |  |  |  |  |  |  |  |  |  | 0 | 0 | 0 |  | 2026-09-10T04:26:38.644799+00:00 | 2026-09-10T04:26:38.722067+00:00 | W5-01 | True | HOLD POINT: jangan mengecat saat dinding masih basah — acian minimal 7–14 hari sebelum cat (risiko cat menggelembung, lembab, jamur). | predecessor W5-01 'Plester dinding' belum diverifikasi (status: blocked). | Plester perlu 2–3 hari sebelum diaci |  |  |
| 3320fc8b-59c9-4bba-8137-27b6c052a556 | org-sipro | 7c197935-db63-4ab3-a7e4-7396e2ed74a7 | bc5400ed-2533-42a9-a1b6-ba270f5e163e | A-01 | 1532b57e-fa1d-4809-bbd6-eca9c7d7d949 | W6-01 | Plafon (rangka hollow, gypsum, list) | arsitektur | 6 | 12 | 5.0 | 36 | 38 | 2026-09-05 | 2026-09-08 | 0 | 2 | W6-01-C1 Rangka hollow rata & kuat (tidak melendut) True pending, W6-01-C2 Sambungan gypsum di-compound rapi  pending, W6-01-C3 List gypsum lurus & rapat ke dinding  pending | Rangka hollow, Pemasangan gypsum, List gypsum | site_engineer | site@sipro.co.id | project_manager | pm@sipro.co.id | blocked |  |  |  |  |  |  |  |  |  | 0 | 0 | 0 |  | 2026-09-10T04:26:38.644799+00:00 | 2026-09-10T04:26:38.722381+00:00 | W4-02 |  |  | predecessor W4-02 'Rangka atap baja ringan, penutup atap, lisplank' belum diverifikasi (status: blocked). |  |  |  |
| b8e2ae65-4dec-4fdf-847a-b162a06dfce6 | org-sipro | 7c197935-db63-4ab3-a7e4-7396e2ed74a7 | bc5400ed-2533-42a9-a1b6-ba270f5e163e | A-01 | 1532b57e-fa1d-4809-bbd6-eca9c7d7d949 | W6-02 | Kusen, daun pintu, jendela & kaca | arsitektur | 6 | 13 | 5.0 | 39 | 41 | 2026-09-09 | 2026-09-11 | 0 | 3 | W6-02-C1 Kusen tegak, terkunci, dan tidak goyang True pending, W6-02-C2 Pintu & jendela menutup rapat, kunci berfungsi True pending, W6-02-C3 Kaca tanpa gores/retak dan sealant rapi  pending | Kusen pintu, Daun pintu, Kusen jendela, Kaca | site_engineer | site@sipro.co.id | project_manager | pm@sipro.co.id | blocked |  |  |  |  |  |  |  |  |  | 0 | 0 | 0 |  | 2026-09-10T04:26:38.644799+00:00 | 2026-09-10T04:26:38.722698+00:00 | W5-02 |  |  | predecessor W5-02 'Acian dinding' belum diverifikasi (status: blocked). |  |  |  |
| 5e84da68-457f-4a1a-98d7-90374d91a5e1 | org-sipro | 7c197935-db63-4ab3-a7e4-7396e2ed74a7 | bc5400ed-2533-42a9-a1b6-ba270f5e163e | A-01 | 1532b57e-fa1d-4809-bbd6-eca9c7d7d949 | W7-01 | Keramik lantai, dinding KM & backsplash dapur | finishing | 7 | 14 | 7.0 | 42 | 45 | 2026-09-12 | 2026-09-16 | 0 | 4 | W7-01-C1 Nat lurus, seragam, dan terisi penuh True pending, W7-01-C2 Tidak kopong saat diketuk True pending, W7-01-C3 Kemiringan lantai KM mengarah ke floor drain True pending | Keramik lantai utama, Keramik kamar mandi, Keramik dinding KM, Keramik backsplash dapur | site_engineer | site@sipro.co.id | project_manager | pm@sipro.co.id | blocked |  |  |  |  |  |  |  |  |  | 0 | 0 | 0 |  | 2026-09-10T04:26:38.644799+00:00 | 2026-09-10T04:26:38.722984+00:00 | W5-02, W6-01 |  |  | predecessor W5-02 'Acian dinding' belum diverifikasi (status: blocked)., predecessor W6-01 'Plafon (rangka hollow, gypsum, list)' belum diverifikasi (status: blocked). |  |  |  |
| 3c305418-2c2a-4e59-8c65-5090b19263cd | org-sipro | 7c197935-db63-4ab3-a7e4-7396e2ed74a7 | bc5400ed-2533-42a9-a1b6-ba270f5e163e | A-01 | 1532b57e-fa1d-4809-bbd6-eca9c7d7d949 | W7-02 | Sanitasi & jalur air bersih (closet, kran, sink, septictank) | mep | 7 | 15 | 5.0 | 46 | 47 | 2026-09-17 | 2026-09-18 | 1 | 3 | W7-02-C1 Tes aliran air lancar di semua titik True pending, W7-02-C2 Tidak ada kebocoran pada sambungan True pending, W7-02-C3 Septictank & resapan sesuai spesifikasi  pending | Closet, Kran, Sink dapur, Septictank & resapan, Jalur air bersih | site_engineer | site@sipro.co.id | project_manager | pm@sipro.co.id | blocked |  |  |  |  |  |  |  |  |  | 0 | 0 | 0 |  | 2026-09-10T04:26:38.644799+00:00 | 2026-09-10T04:26:38.723284+00:00 | W7-01 |  |  | predecessor W7-01 'Keramik lantai, dinding KM & backsplash dapur' belum diverifikasi (status: blocked). | Nat keramik harus kering sebelum pemasangan sanitair |  |  |
| c2fe80ac-0db0-4fd1-b5cb-4c9960edbab9 | org-sipro | 7c197935-db63-4ab3-a7e4-7396e2ed74a7 | bc5400ed-2533-42a9-a1b6-ba270f5e163e | A-01 | 1532b57e-fa1d-4809-bbd6-eca9c7d7d949 | W8-01 | Instalasi listrik (lampu, saklar, stop kontak) | mep | 8 | 16 | 4.0 | 48 | 50 | 2026-09-19 | 2026-09-22 | 0 | 3 | W8-01-C1 Semua titik diuji dan menyala True pending, W8-01-C2 Tidak ada kabel terbuka / sambungan liar True pending, W8-01-C3 MCB & grounding sesuai spesifikasi True pending | Lampu, Saklar, Stop kontak, Pengujian titik | site_engineer | site@sipro.co.id | project_manager | pm@sipro.co.id | blocked |  |  |  |  |  |  |  |  |  | 0 | 0 | 0 |  | 2026-09-10T04:26:38.644799+00:00 | 2026-09-10T04:26:39.911963+00:00 | W3-02, W6-01 |  |  | predecessor W3-02 'Jalur plumbing & conduit listrik tanam (sebelum plester)' belum diverifikasi (status: submitted)., predecessor W6-01 'Plafon (rangka hollow, gypsum, list)' belum diverifikasi (status: blocked). |  |  |  |
| 714dda47-43bb-446e-a3c6-c8e919fc9cf2 | org-sipro | 7c197935-db63-4ab3-a7e4-7396e2ed74a7 | bc5400ed-2533-42a9-a1b6-ba270f5e163e | A-01 | 1532b57e-fa1d-4809-bbd6-eca9c7d7d949 | W8-02 | Pengecatan interior, eksterior, plafon & lisplank | finishing | 8 | 17 | 5.0 | 51 | 53 | 2026-09-23 | 2026-09-25 | 7 | 3 | W8-02-C1 Dinding kering saat diuji kelembaban True pending, W8-02-C2 Cat rata minimal 2 lapis, tidak belang True pending, W8-02-C3 Tidak ada cipratan pada kusen/keramik  pending | Cat interior, Cat eksterior, Cat plafon, Cat lisplank | site_engineer | site@sipro.co.id | project_manager | pm@sipro.co.id | blocked |  |  |  |  |  |  |  |  |  | 0 | 0 | 0 |  | 2026-09-10T04:26:38.644799+00:00 | 2026-09-10T04:26:38.723865+00:00 | W5-02, W6-01 | True | HOLD POINT: dinding wajib kering (uji lembab) sebelum cat dasar. | predecessor W5-02 'Acian dinding' belum diverifikasi (status: blocked)., predecessor W6-01 'Plafon (rangka hollow, gypsum, list)' belum diverifikasi (status: blocked). | Acian minimal 7–14 hari agar dinding kering sebelum dicat |  |  |
| 027398bb-20fa-4134-adb6-f05d25721617 | org-sipro | 7c197935-db63-4ab3-a7e4-7396e2ed74a7 | bc5400ed-2533-42a9-a1b6-ba270f5e163e | A-01 | 1532b57e-fa1d-4809-bbd6-eca9c7d7d949 | W8-03 | Pekerjaan luar (carport, dinding samping, taman) | lansekap | 8 | 18 | 3.0 | 54 | 54 | 2026-09-26 | 2026-09-26 | 0 | 2 | W8-03-C1 Carport rata, air tidak menggenang True pending, W8-03-C2 Area luar bersih dan rapi  pending | Carport, Dinding samping, Taman | site_engineer | site@sipro.co.id | project_manager | pm@sipro.co.id | blocked |  |  |  |  |  |  |  |  |  | 0 | 0 | 0 |  | 2026-09-10T04:26:38.644799+00:00 | 2026-09-10T04:26:38.724162+00:00 | W8-02 |  |  | predecessor W8-02 'Pengecatan interior, eksterior, plafon & lisplank' belum diverifikasi (status: blocked). |  |  |  |
| d244c76e-6682-45c5-a657-89972e448aff | org-sipro | 7c197935-db63-4ab3-a7e4-7396e2ed74a7 | bc5400ed-2533-42a9-a1b6-ba270f5e163e | A-01 | 1532b57e-fa1d-4809-bbd6-eca9c7d7d949 | W9-01 | Pembersihan akhir & perbaikan defect | finishing | 9 | 19 | 3.0 | 55 | 58 | 2026-09-28 | 2026-10-01 | 0 | 3 | W9-01-C1 Semua temuan punch list sudah ditutup True pending, W9-01-C2 Bebas sisa material & puing True pending | Pembersihan akhir, Repair defect / punch list | site_engineer | site@sipro.co.id | project_manager | pm@sipro.co.id | blocked |  |  |  |  |  |  |  |  |  | 0 | 0 | 0 |  | 2026-09-10T04:26:38.644799+00:00 | 2026-09-10T04:26:38.724448+00:00 | W8-01, W8-02, W8-03 |  |  | predecessor W8-01 'Instalasi listrik (lampu, saklar, stop kontak)' belum diverifikasi (status: blocked)., predecessor W8-02 'Pengecatan interior, eksterior, plafon & lisplank' belum diverifikasi (status: blocked)., predecessor W8-03 'Pekerjaan luar (carport, dinding samping, taman)' belum diverifikasi (status: blocked). |  |  |  |
| 409fee88-fd10-426a-bdfc-5d109bf8d40c | org-sipro | 7c197935-db63-4ab3-a7e4-7396e2ed74a7 | bc5400ed-2533-42a9-a1b6-ba270f5e163e | A-01 | 1532b57e-fa1d-4809-bbd6-eca9c7d7d949 | W9-02 | Final QC & siap akad / serah terima | finishing | 9 | 20 | 2.0 | 59 | 60 | 2026-10-02 | 2026-10-03 | 0 | 4 | W9-02-C1 Air & listrik berfungsi normal True pending, W9-02-C2 Tidak ada kebocoran atap/plumbing True pending, W9-02-C3 Kunci, dokumen, dan manual siap diserahkan True pending, W9-02-C4 Pembeli/QC menandatangani hasil final  pending | Final QC, Serah terima kunci & dokumen | site_engineer | site@sipro.co.id | project_manager | pm@sipro.co.id | blocked |  |  |  |  |  |  |  |  |  | 0 | 0 | 0 |  | 2026-09-10T04:26:38.644799+00:00 | 2026-09-10T04:26:38.724757+00:00 | W9-01 | True | HOLD POINT: unit tidak boleh dinyatakan siap serah terima sebelum Final QC lulus (air, listrik, bocor, kunci, dokumen). | predecessor W9-01 'Pembersihan akhir & perbaikan defect' belum diverifikasi (status: blocked). |  | True |  |
| 4bdc1f69-e150-4338-8410-f0efe8f1d850 | org-sipro | 7c197935-db63-4ab3-a7e4-7396e2ed74a7 | eb726daf-1fd8-4212-baf4-1131c4859cee | A-03 | 2fd5d68a-2f50-4b6e-821f-bc955ae839d6 | W1-01 | Pekerjaan persiapan (pembersihan, pengukuran, bowplank) | persiapan | 1 | 1 | 2.0 | 1 | 2 | 2026-09-14 | 2026-09-15 | 0 | 2 | W1-01-C1 As bangunan sesuai siteplan True pending, W1-01-C2 Elevasi lantai aman dari jalan & drainase True pending, W1-01-C3 Bowplank kuat, siku, dan tidak mudah bergeser  pending | Pembersihan lokasi, Pengukuran, Pemasangan bowplank | site_engineer | site@sipro.co.id | project_manager | pm@sipro.co.id | ready |  |  |  |  |  |  |  |  |  | 0 | 0 | 0 | f0d9fe47-c079-401f-91c7-2cfcbd9a6ba7 | 2026-09-10T04:26:40.625760+00:00 | 2026-09-10T04:26:40.631264+00:00 |  |  |  |  |  |  |  |
| aa97ffb7-13ae-4e72-9d22-6023ac4863a4 | org-sipro | 7c197935-db63-4ab3-a7e4-7396e2ed74a7 | eb726daf-1fd8-4212-baf4-1131c4859cee | A-03 | 2fd5d68a-2f50-4b6e-821f-bc955ae839d6 | W1-02 | Pekerjaan tanah & pondasi (galian, urugan pasir, batu belah) | struktur | 1 | 2 | 8.0 | 3 | 7 | 2026-09-16 | 2026-09-21 | 0 | 3 | W1-02-C1 Kedalaman & lebar galian sesuai gambar True pending, W1-02-C2 Urugan pasir dipadatkan dan rata  pending, W1-02-C3 Pasangan batu belah terkunci penuh, spesi mengisi rongga True pending, W1-02-C4 Tidak ada bagian pondasi yang menggantung/ambles True pending | Galian pondasi, Urugan pasir, Pasangan batu belah | site_engineer | site@sipro.co.id | project_manager | pm@sipro.co.id | blocked |  |  |  |  |  |  |  |  |  | 0 | 0 | 0 |  | 2026-09-10T04:26:40.625760+00:00 | 2026-09-10T04:26:40.726070+00:00 | W1-01 | True | HOLD POINT: tidak boleh lanjut sloof sebelum pondasi benar-benar terkunci (pasangan batu belah penuh, tidak ada rongga). | predecessor W1-01 'Pekerjaan persiapan (pembersihan, pengukuran, bowplank)' belum diverifikasi (status: ready). |  |  |  |
| 50887f52-5ed9-48e5-85f2-4cfaf31c1a34 | org-sipro | 7c197935-db63-4ab3-a7e4-7396e2ed74a7 | eb726daf-1fd8-4212-baf4-1131c4859cee | A-03 | 2fd5d68a-2f50-4b6e-821f-bc955ae839d6 | W2-01 | Pembesian & bekisting sloof + kolom praktis | struktur | 2 | 3 | 6.0 | 8 | 10 | 2026-09-22 | 2026-09-24 | 2 | 3 | W2-01-C1 Diameter & jumlah besi sesuai gambar True pending, W2-01-C2 Beton decking (selimut beton) terpasang True pending, W2-01-C3 Bekisting kokoh, lurus, tidak bocor  pending | Pembesian sloof, Pembesian kolom praktis, Pemasangan bekisting | site_engineer | site@sipro.co.id | project_manager | pm@sipro.co.id | blocked |  |  |  |  |  |  |  |  |  | 0 | 0 | 0 |  | 2026-09-10T04:26:40.625760+00:00 | 2026-09-10T04:26:40.712933+00:00 | W1-02 |  |  | predecessor W1-02 'Pekerjaan tanah & pondasi (galian, urugan pasir, batu belah)' belum diverifikasi (status: blocked). | Pondasi batu kali minimal 1–2 hari sebelum sloof dikerjakan |  |  |
| 2bc0f859-da8b-4575-8f10-ab8c51f9e8f1 | org-sipro | 7c197935-db63-4ab3-a7e4-7396e2ed74a7 | eb726daf-1fd8-4212-baf4-1131c4859cee | A-03 | 2fd5d68a-2f50-4b6e-821f-bc955ae839d6 | W2-02 | Pengecoran sloof, kolom praktis & talang beton | struktur | 2 | 4 | 6.0 | 11 | 11 | 2026-09-25 | 2026-09-25 | 0 | 2 | W2-02-C1 Mutu/slump beton sesuai spesifikasi True pending, W2-02-C2 Pengecoran padat, tidak keropos/segregasi True pending, W2-02-C3 Tanggal & jam pengecoran dicatat True pending | Pengecoran sloof, Pengecoran kolom praktis, Talang beton | site_engineer | site@sipro.co.id | project_manager | pm@sipro.co.id | blocked |  |  |  |  |  |  |  |  |  | 0 | 0 | 0 |  | 2026-09-10T04:26:40.625760+00:00 | 2026-09-10T04:26:40.713530+00:00 | W2-01 |  |  | predecessor W2-01 'Pembesian & bekisting sloof + kolom praktis' belum diverifikasi (status: blocked). |  |  |  |
| 62364b82-e5d9-4ec9-a2cf-429e9a485a60 | org-sipro | 7c197935-db63-4ab3-a7e4-7396e2ed74a7 | eb726daf-1fd8-4212-baf4-1131c4859cee | A-03 | 2fd5d68a-2f50-4b6e-821f-bc955ae839d6 | W2-03 | Curing beton & pembongkaran bekisting | struktur | 2 | 5 | 3.0 | 12 | 14 | 2026-09-26 | 2026-09-29 | 1 | 2 | W2-03-C1 Curing disiram/ditutup minimal 7 hari True pending, W2-03-C2 Tidak ada retak susut besar / keropos True pending, W2-03-C3 Tanggal pembongkaran bekisting dicatat  pending | Perawatan beton (curing), Buka bekisting samping | site_engineer | site@sipro.co.id | project_manager | pm@sipro.co.id | blocked |  |  |  |  |  |  |  |  |  | 0 | 0 | 0 |  | 2026-09-10T04:26:40.625760+00:00 | 2026-09-10T04:26:40.713998+00:00 | W2-02 | True | HOLD POINT: bekisting jangan dibuka/dibebani terlalu cepat — samping 24 jam, beban berat 7 hari, kuat optimal 28 hari. | predecessor W2-02 'Pengecoran sloof, kolom praktis & talang beton' belum diverifikasi (status: blocked). | Bekisting samping minimal 24 jam setelah pengecoran |  |  |
| 156f41cd-6f83-46cc-9316-bbcd2ccc2fd0 | org-sipro | 7c197935-db63-4ab3-a7e4-7396e2ed74a7 | eb726daf-1fd8-4212-baf4-1131c4859cee | A-03 | 2fd5d68a-2f50-4b6e-821f-bc955ae839d6 | W3-01 | Pasangan dinding bata merah | arsitektur | 3 | 6 | 8.0 | 15 | 21 | 2026-09-30 | 2026-10-07 | 3 | 3 | W3-01-C1 Pasangan tegak, lurus, dan siku True pending, W3-01-C2 Spesi terisi penuh (tidak ada rongga) True pending, W3-01-C3 Angkur kolom praktis terpasang tiap 6 lapis  pending | Pasangan bata merah, Kolom praktis lanjutan | site_engineer | site@sipro.co.id | project_manager | pm@sipro.co.id | blocked |  |  |  |  |  |  |  |  |  | 0 | 0 | 0 |  | 2026-09-10T04:26:40.625760+00:00 | 2026-09-10T04:26:40.714469+00:00 | W2-03 |  |  | predecessor W2-03 'Curing beton & pembongkaran bekisting' belum diverifikasi (status: blocked). | Cor sloof minimal 3–7 hari sebelum pasangan bata dimulai |  |  |
| a83326ab-637f-458f-a4e1-1e177d973977 | org-sipro | 7c197935-db63-4ab3-a7e4-7396e2ed74a7 | eb726daf-1fd8-4212-baf4-1131c4859cee | A-03 | 2fd5d68a-2f50-4b6e-821f-bc955ae839d6 | W3-02 | Jalur plumbing & conduit listrik tanam (sebelum plester) | mep | 3 | 7 | 4.0 | 15 | 21 | 2026-09-30 | 2026-10-07 | 0 | 3 | W3-02-C1 Jalur air diuji tekan tanpa kebocoran True pending, W3-02-C2 Conduit utuh, tidak tertekuk/pecah True pending, W3-02-C3 Foto as-built jalur diambil sebelum ditutup True pending | Jalur air bersih & kotor tanam, Conduit listrik tanam | site_engineer | site@sipro.co.id | project_manager | pm@sipro.co.id | blocked |  |  |  |  |  |  |  |  |  | 0 | 0 | 0 |  | 2026-09-10T04:26:40.625760+00:00 | 2026-09-10T04:26:40.714953+00:00 | W3-01 | True | HOLD POINT: jangan plester sebelum jalur plumbing & conduit tanam selesai, diuji, dan difoto sebagai as-built. | predecessor W3-01 'Pasangan dinding bata merah' belum diverifikasi (status: blocked). |  |  |  |
| 1654261e-66e1-4708-a55a-e1a9a8a1e3a3 | org-sipro | 7c197935-db63-4ab3-a7e4-7396e2ed74a7 | eb726daf-1fd8-4212-baf4-1131c4859cee | A-03 | 2fd5d68a-2f50-4b6e-821f-bc955ae839d6 | W4-01 | Ring balok & ring gevel | struktur | 4 | 8 | 6.0 | 22 | 24 | 2026-10-08 | 2026-10-10 | 0 | 2 | W4-01-C1 Pembesian ring balk sesuai gambar True pending, W4-01-C2 Pengecoran padat & elevasi rata True pending, W4-01-C3 Angkur kuda-kuda disiapkan  pending | Pembesian & bekisting ring balk, Pengecoran ring balk, Ring gevel | site_engineer | site@sipro.co.id | project_manager | pm@sipro.co.id | blocked |  |  |  |  |  |  |  |  |  | 0 | 0 | 0 |  | 2026-09-10T04:26:40.625760+00:00 | 2026-09-10T04:26:40.715442+00:00 | W3-01, W3-02 |  |  | predecessor W3-01 'Pasangan dinding bata merah' belum diverifikasi (status: blocked)., predecessor W3-02 'Jalur plumbing & conduit listrik tanam (sebelum plester)' belum diverifikasi (status: blocked). |  |  |  |
| f5f485b6-8770-40eb-9437-127e5a6b2609 | org-sipro | 7c197935-db63-4ab3-a7e4-7396e2ed74a7 | eb726daf-1fd8-4212-baf4-1131c4859cee | A-03 | 2fd5d68a-2f50-4b6e-821f-bc955ae839d6 | W4-02 | Rangka atap baja ringan, penutup atap, lisplank | arsitektur | 4 | 9 | 8.0 | 25 | 27 | 2026-10-12 | 2026-10-14 | 3 | 4 | W4-02-C1 Jarak kuda-kuda & reng sesuai spesifikasi True pending, W4-02-C2 Sambungan/screw lengkap dan kencang  pending, W4-02-C3 Tes siram air: tidak ada kebocoran True pending, W4-02-C4 Kemiringan talang mengalir, tidak menggenang True pending | Rangka atap baja ringan, Genteng metal / atap spandek, Lisplank | site_engineer | site@sipro.co.id | project_manager | pm@sipro.co.id | blocked |  |  |  |  |  |  |  |  |  | 0 | 0 | 0 |  | 2026-09-10T04:26:40.625760+00:00 | 2026-09-10T04:26:40.715835+00:00 | W4-01 | True | HOLD POINT: jangan lanjut plafon bila atap masih bocor — wajib TES SIRAM AIR dan cek kemiringan talang. | predecessor W4-01 'Ring balok & ring gevel' belum diverifikasi (status: blocked). | Ring balok perlu mengeras minimal 3 hari sebelum dibebani rangka atap |  |  |
| 384b0702-fc4c-419e-998c-2f1e07531be6 | org-sipro | 7c197935-db63-4ab3-a7e4-7396e2ed74a7 | eb726daf-1fd8-4212-baf4-1131c4859cee | A-03 | 2fd5d68a-2f50-4b6e-821f-bc955ae839d6 | W5-01 | Plester dinding | arsitektur | 5 | 10 | 6.0 | 28 | 32 | 2026-10-15 | 2026-10-20 | 3 | 3 | W5-01-C1 Permukaan rata, tegak, tidak bergelombang True pending, W5-01-C2 Sudut siku dan tajam  pending, W5-01-C3 Tidak ada bagian kosong/berongga saat diketuk True pending | Plester dinding dalam, Plester dinding luar | site_engineer | site@sipro.co.id | project_manager | pm@sipro.co.id | blocked |  |  |  |  |  |  |  |  |  | 0 | 0 | 0 |  | 2026-09-10T04:26:40.625760+00:00 | 2026-09-10T04:26:40.716212+00:00 | W3-02, W4-02 |  |  | predecessor W3-02 'Jalur plumbing & conduit listrik tanam (sebelum plester)' belum diverifikasi (status: blocked)., predecessor W4-02 'Rangka atap baja ringan, penutup atap, lisplank' belum diverifikasi (status: blocked). | Mortar bata harus stabil 3–5 hari agar plester tidak retak rambut |  |  |
| 1010ba15-b157-41a8-b367-83febab5145c | org-sipro | 7c197935-db63-4ab3-a7e4-7396e2ed74a7 | eb726daf-1fd8-4212-baf4-1131c4859cee | A-03 | 2fd5d68a-2f50-4b6e-821f-bc955ae839d6 | W5-02 | Acian dinding | arsitektur | 5 | 11 | 4.0 | 33 | 35 | 2026-10-21 | 2026-10-23 | 3 | 2 | W5-02-C1 Acian halus, tanpa retak rambut True pending, W5-02-C2 Tidak ada bagian mengelupas / berdebu  pending | Acian dinding dalam, Acian dinding luar | site_engineer | site@sipro.co.id | project_manager | pm@sipro.co.id | blocked |  |  |  |  |  |  |  |  |  | 0 | 0 | 0 |  | 2026-09-10T04:26:40.625760+00:00 | 2026-09-10T04:26:40.716566+00:00 | W5-01 | True | HOLD POINT: jangan mengecat saat dinding masih basah — acian minimal 7–14 hari sebelum cat (risiko cat menggelembung, lembab, jamur). | predecessor W5-01 'Plester dinding' belum diverifikasi (status: blocked). | Plester perlu 2–3 hari sebelum diaci |  |  |
| ed17067b-e296-4afe-b14b-cd6d09cc32bd | org-sipro | 7c197935-db63-4ab3-a7e4-7396e2ed74a7 | eb726daf-1fd8-4212-baf4-1131c4859cee | A-03 | 2fd5d68a-2f50-4b6e-821f-bc955ae839d6 | W6-01 | Plafon (rangka hollow, gypsum, list) | arsitektur | 6 | 12 | 5.0 | 36 | 38 | 2026-10-24 | 2026-10-27 | 0 | 2 | W6-01-C1 Rangka hollow rata & kuat (tidak melendut) True pending, W6-01-C2 Sambungan gypsum di-compound rapi  pending, W6-01-C3 List gypsum lurus & rapat ke dinding  pending | Rangka hollow, Pemasangan gypsum, List gypsum | site_engineer | site@sipro.co.id | project_manager | pm@sipro.co.id | blocked |  |  |  |  |  |  |  |  |  | 0 | 0 | 0 |  | 2026-09-10T04:26:40.625760+00:00 | 2026-09-10T04:26:40.716870+00:00 | W4-02 |  |  | predecessor W4-02 'Rangka atap baja ringan, penutup atap, lisplank' belum diverifikasi (status: blocked). |  |  |  |
| 7b88f198-1667-4d3b-8fa9-771c2281d675 | org-sipro | 7c197935-db63-4ab3-a7e4-7396e2ed74a7 | eb726daf-1fd8-4212-baf4-1131c4859cee | A-03 | 2fd5d68a-2f50-4b6e-821f-bc955ae839d6 | W6-02 | Kusen, daun pintu, jendela & kaca | arsitektur | 6 | 13 | 5.0 | 39 | 41 | 2026-10-28 | 2026-10-30 | 0 | 3 | W6-02-C1 Kusen tegak, terkunci, dan tidak goyang True pending, W6-02-C2 Pintu & jendela menutup rapat, kunci berfungsi True pending, W6-02-C3 Kaca tanpa gores/retak dan sealant rapi  pending | Kusen pintu, Daun pintu, Kusen jendela, Kaca | site_engineer | site@sipro.co.id | project_manager | pm@sipro.co.id | blocked |  |  |  |  |  |  |  |  |  | 0 | 0 | 0 |  | 2026-09-10T04:26:40.625760+00:00 | 2026-09-10T04:26:40.717204+00:00 | W5-02 |  |  | predecessor W5-02 'Acian dinding' belum diverifikasi (status: blocked). |  |  |  |
| 05d8907f-6013-42db-b6a2-aa84282c1e70 | org-sipro | 7c197935-db63-4ab3-a7e4-7396e2ed74a7 | eb726daf-1fd8-4212-baf4-1131c4859cee | A-03 | 2fd5d68a-2f50-4b6e-821f-bc955ae839d6 | W7-01 | Keramik lantai, dinding KM & backsplash dapur | finishing | 7 | 14 | 7.0 | 42 | 45 | 2026-10-31 | 2026-11-04 | 0 | 4 | W7-01-C1 Nat lurus, seragam, dan terisi penuh True pending, W7-01-C2 Tidak kopong saat diketuk True pending, W7-01-C3 Kemiringan lantai KM mengarah ke floor drain True pending | Keramik lantai utama, Keramik kamar mandi, Keramik dinding KM, Keramik backsplash dapur | site_engineer | site@sipro.co.id | project_manager | pm@sipro.co.id | blocked |  |  |  |  |  |  |  |  |  | 0 | 0 | 0 |  | 2026-09-10T04:26:40.625760+00:00 | 2026-09-10T04:26:40.717511+00:00 | W5-02, W6-01 |  |  | predecessor W5-02 'Acian dinding' belum diverifikasi (status: blocked)., predecessor W6-01 'Plafon (rangka hollow, gypsum, list)' belum diverifikasi (status: blocked). |  |  |  |
| 921f5585-3772-4414-813e-7e774d463917 | org-sipro | 7c197935-db63-4ab3-a7e4-7396e2ed74a7 | eb726daf-1fd8-4212-baf4-1131c4859cee | A-03 | 2fd5d68a-2f50-4b6e-821f-bc955ae839d6 | W7-02 | Sanitasi & jalur air bersih (closet, kran, sink, septictank) | mep | 7 | 15 | 5.0 | 46 | 47 | 2026-11-05 | 2026-11-06 | 1 | 3 | W7-02-C1 Tes aliran air lancar di semua titik True pending, W7-02-C2 Tidak ada kebocoran pada sambungan True pending, W7-02-C3 Septictank & resapan sesuai spesifikasi  pending | Closet, Kran, Sink dapur, Septictank & resapan, Jalur air bersih | site_engineer | site@sipro.co.id | project_manager | pm@sipro.co.id | blocked |  |  |  |  |  |  |  |  |  | 0 | 0 | 0 |  | 2026-09-10T04:26:40.625760+00:00 | 2026-09-10T04:26:40.717836+00:00 | W7-01 |  |  | predecessor W7-01 'Keramik lantai, dinding KM & backsplash dapur' belum diverifikasi (status: blocked). | Nat keramik harus kering sebelum pemasangan sanitair |  |  |
| bb5da83c-f10c-4819-b061-bc3f9e698000 | org-sipro | 7c197935-db63-4ab3-a7e4-7396e2ed74a7 | eb726daf-1fd8-4212-baf4-1131c4859cee | A-03 | 2fd5d68a-2f50-4b6e-821f-bc955ae839d6 | W8-01 | Instalasi listrik (lampu, saklar, stop kontak) | mep | 8 | 16 | 4.0 | 48 | 50 | 2026-11-07 | 2026-11-10 | 0 | 3 | W8-01-C1 Semua titik diuji dan menyala True pending, W8-01-C2 Tidak ada kabel terbuka / sambungan liar True pending, W8-01-C3 MCB & grounding sesuai spesifikasi True pending | Lampu, Saklar, Stop kontak, Pengujian titik | site_engineer | site@sipro.co.id | project_manager | pm@sipro.co.id | blocked |  |  |  |  |  |  |  |  |  | 0 | 0 | 0 |  | 2026-09-10T04:26:40.625760+00:00 | 2026-09-10T04:26:40.718133+00:00 | W3-02, W6-01 |  |  | predecessor W3-02 'Jalur plumbing & conduit listrik tanam (sebelum plester)' belum diverifikasi (status: blocked)., predecessor W6-01 'Plafon (rangka hollow, gypsum, list)' belum diverifikasi (status: blocked). |  |  |  |
| bf3747b4-459e-459e-8499-10e3861058ba | org-sipro | 7c197935-db63-4ab3-a7e4-7396e2ed74a7 | eb726daf-1fd8-4212-baf4-1131c4859cee | A-03 | 2fd5d68a-2f50-4b6e-821f-bc955ae839d6 | W8-02 | Pengecatan interior, eksterior, plafon & lisplank | finishing | 8 | 17 | 5.0 | 51 | 53 | 2026-11-11 | 2026-11-13 | 7 | 3 | W8-02-C1 Dinding kering saat diuji kelembaban True pending, W8-02-C2 Cat rata minimal 2 lapis, tidak belang True pending, W8-02-C3 Tidak ada cipratan pada kusen/keramik  pending | Cat interior, Cat eksterior, Cat plafon, Cat lisplank | site_engineer | site@sipro.co.id | project_manager | pm@sipro.co.id | blocked |  |  |  |  |  |  |  |  |  | 0 | 0 | 0 |  | 2026-09-10T04:26:40.625760+00:00 | 2026-09-10T04:26:40.718441+00:00 | W5-02, W6-01 | True | HOLD POINT: dinding wajib kering (uji lembab) sebelum cat dasar. | predecessor W5-02 'Acian dinding' belum diverifikasi (status: blocked)., predecessor W6-01 'Plafon (rangka hollow, gypsum, list)' belum diverifikasi (status: blocked). | Acian minimal 7–14 hari agar dinding kering sebelum dicat |  |  |
| c6d6adf6-9c68-4a09-8dfd-c9c155c60bd0 | org-sipro | 7c197935-db63-4ab3-a7e4-7396e2ed74a7 | eb726daf-1fd8-4212-baf4-1131c4859cee | A-03 | 2fd5d68a-2f50-4b6e-821f-bc955ae839d6 | W8-03 | Pekerjaan luar (carport, dinding samping, taman) | lansekap | 8 | 18 | 3.0 | 54 | 54 | 2026-11-14 | 2026-11-14 | 0 | 2 | W8-03-C1 Carport rata, air tidak menggenang True pending, W8-03-C2 Area luar bersih dan rapi  pending | Carport, Dinding samping, Taman | site_engineer | site@sipro.co.id | project_manager | pm@sipro.co.id | blocked |  |  |  |  |  |  |  |  |  | 0 | 0 | 0 |  | 2026-09-10T04:26:40.625760+00:00 | 2026-09-10T04:26:40.718738+00:00 | W8-02 |  |  | predecessor W8-02 'Pengecatan interior, eksterior, plafon & lisplank' belum diverifikasi (status: blocked). |  |  |  |
| b42bc56d-f313-4579-95b0-52f0fe2a5806 | org-sipro | 7c197935-db63-4ab3-a7e4-7396e2ed74a7 | eb726daf-1fd8-4212-baf4-1131c4859cee | A-03 | 2fd5d68a-2f50-4b6e-821f-bc955ae839d6 | W9-01 | Pembersihan akhir & perbaikan defect | finishing | 9 | 19 | 3.0 | 55 | 58 | 2026-11-16 | 2026-11-19 | 0 | 3 | W9-01-C1 Semua temuan punch list sudah ditutup True pending, W9-01-C2 Bebas sisa material & puing True pending | Pembersihan akhir, Repair defect / punch list | site_engineer | site@sipro.co.id | project_manager | pm@sipro.co.id | blocked |  |  |  |  |  |  |  |  |  | 0 | 0 | 0 |  | 2026-09-10T04:26:40.625760+00:00 | 2026-09-10T04:26:40.719040+00:00 | W8-01, W8-02, W8-03 |  |  | predecessor W8-01 'Instalasi listrik (lampu, saklar, stop kontak)' belum diverifikasi (status: blocked)., predecessor W8-02 'Pengecatan interior, eksterior, plafon & lisplank' belum diverifikasi (status: blocked)., predecessor W8-03 'Pekerjaan luar (carport, dinding samping, taman)' belum diverifikasi (status: blocked). |  |  |  |
| f25e2259-e5e5-4384-8415-ea06191e29c2 | org-sipro | 7c197935-db63-4ab3-a7e4-7396e2ed74a7 | eb726daf-1fd8-4212-baf4-1131c4859cee | A-03 | 2fd5d68a-2f50-4b6e-821f-bc955ae839d6 | W9-02 | Final QC & siap akad / serah terima | finishing | 9 | 20 | 2.0 | 59 | 60 | 2026-11-20 | 2026-11-21 | 0 | 4 | W9-02-C1 Air & listrik berfungsi normal True pending, W9-02-C2 Tidak ada kebocoran atap/plumbing True pending, W9-02-C3 Kunci, dokumen, dan manual siap diserahkan True pending, W9-02-C4 Pembeli/QC menandatangani hasil final  pending | Final QC, Serah terima kunci & dokumen | site_engineer | site@sipro.co.id | project_manager | pm@sipro.co.id | blocked |  |  |  |  |  |  |  |  |  | 0 | 0 | 0 |  | 2026-09-10T04:26:40.625760+00:00 | 2026-09-10T04:26:40.719348+00:00 | W9-01 | True | HOLD POINT: unit tidak boleh dinyatakan siap serah terima sebelum Final QC lulus (air, listrik, bocor, kunci, dokumen). | predecessor W9-01 'Pembersihan akhir & perbaikan defect' belum diverifikasi (status: blocked). |  | True |  |
| 1e9812d4-2d77-4c82-8fb9-d39a07418e03 | org-sipro | 7c197935-db63-4ab3-a7e4-7396e2ed74a7 | 3389c75b-e8e6-40bb-802f-8d5f188947b8 | A-05 | 9e11ab29-9799-452b-beb6-9d45eb81283f | W1-01 | Pekerjaan persiapan (pembersihan, pengukuran, bowplank) | persiapan | 1 | 1 | 2.0 | 1 | 2 | 2026-09-10 | 2026-09-11 | 0 | 2 | W1-01-C1 As bangunan sesuai siteplan True pending, W1-01-C2 Elevasi lantai aman dari jalan & drainase True pending, W1-01-C3 Bowplank kuat, siku, dan tidak mudah bergeser  pending | Pembersihan lokasi, Pengukuran, Pemasangan bowplank | site_engineer | site@sipro.co.id | project_manager | pm@sipro.co.id | ready |  |  |  |  |  |  |  |  |  | 0 | 0 | 0 | ce672ada-c17a-4081-b9a0-501b51802c9d | 2026-09-10T04:26:41.815391+00:00 | 2026-09-10T04:26:41.821516+00:00 |  |  |  |  |  |  |  |
| 254937ad-473c-42e8-9f00-2a3141a76dcd | org-sipro | 7c197935-db63-4ab3-a7e4-7396e2ed74a7 | 3389c75b-e8e6-40bb-802f-8d5f188947b8 | A-05 | 9e11ab29-9799-452b-beb6-9d45eb81283f | W1-02 | Pekerjaan tanah & pondasi (galian, urugan pasir, batu belah) | struktur | 1 | 2 | 8.0 | 3 | 7 | 2026-09-12 | 2026-09-17 | 0 | 3 | W1-02-C1 Kedalaman & lebar galian sesuai gambar True pending, W1-02-C2 Urugan pasir dipadatkan dan rata  pending, W1-02-C3 Pasangan batu belah terkunci penuh, spesi mengisi rongga True pending, W1-02-C4 Tidak ada bagian pondasi yang menggantung/ambles True pending | Galian pondasi, Urugan pasir, Pasangan batu belah | site_engineer | site@sipro.co.id | project_manager | pm@sipro.co.id | blocked |  |  |  |  |  |  |  |  |  | 0 | 0 | 0 |  | 2026-09-10T04:26:41.815391+00:00 | 2026-09-10T04:26:41.824483+00:00 | W1-01 | True | HOLD POINT: tidak boleh lanjut sloof sebelum pondasi benar-benar terkunci (pasangan batu belah penuh, tidak ada rongga). | predecessor W1-01 'Pekerjaan persiapan (pembersihan, pengukuran, bowplank)' belum diverifikasi (status: blocked). |  |  |  |
| fd3a3de9-f2db-4d1a-8774-116a0894af21 | org-sipro | 7c197935-db63-4ab3-a7e4-7396e2ed74a7 | 3389c75b-e8e6-40bb-802f-8d5f188947b8 | A-05 | 9e11ab29-9799-452b-beb6-9d45eb81283f | W2-01 | Pembesian & bekisting sloof + kolom praktis | struktur | 2 | 3 | 6.0 | 8 | 10 | 2026-09-18 | 2026-09-21 | 2 | 3 | W2-01-C1 Diameter & jumlah besi sesuai gambar True pending, W2-01-C2 Beton decking (selimut beton) terpasang True pending, W2-01-C3 Bekisting kokoh, lurus, tidak bocor  pending | Pembesian sloof, Pembesian kolom praktis, Pemasangan bekisting | site_engineer | site@sipro.co.id | project_manager | pm@sipro.co.id | blocked |  |  |  |  |  |  |  |  |  | 0 | 0 | 0 |  | 2026-09-10T04:26:41.815391+00:00 | 2026-09-10T04:26:41.824845+00:00 | W1-02 |  |  | predecessor W1-02 'Pekerjaan tanah & pondasi (galian, urugan pasir, batu belah)' belum diverifikasi (status: blocked). | Pondasi batu kali minimal 1–2 hari sebelum sloof dikerjakan |  |  |
| aa9f24a6-3998-48a8-81f2-57e8aca61765 | org-sipro | 7c197935-db63-4ab3-a7e4-7396e2ed74a7 | 3389c75b-e8e6-40bb-802f-8d5f188947b8 | A-05 | 9e11ab29-9799-452b-beb6-9d45eb81283f | W2-02 | Pengecoran sloof, kolom praktis & talang beton | struktur | 2 | 4 | 6.0 | 11 | 11 | 2026-09-22 | 2026-09-22 | 0 | 2 | W2-02-C1 Mutu/slump beton sesuai spesifikasi True pending, W2-02-C2 Pengecoran padat, tidak keropos/segregasi True pending, W2-02-C3 Tanggal & jam pengecoran dicatat True pending | Pengecoran sloof, Pengecoran kolom praktis, Talang beton | site_engineer | site@sipro.co.id | project_manager | pm@sipro.co.id | blocked |  |  |  |  |  |  |  |  |  | 0 | 0 | 0 |  | 2026-09-10T04:26:41.815391+00:00 | 2026-09-10T04:26:41.825159+00:00 | W2-01 |  |  | predecessor W2-01 'Pembesian & bekisting sloof + kolom praktis' belum diverifikasi (status: blocked). |  |  |  |
| ea7974b5-fddb-4c39-bf40-065477ea6ed4 | org-sipro | 7c197935-db63-4ab3-a7e4-7396e2ed74a7 | 3389c75b-e8e6-40bb-802f-8d5f188947b8 | A-05 | 9e11ab29-9799-452b-beb6-9d45eb81283f | W2-03 | Curing beton & pembongkaran bekisting | struktur | 2 | 5 | 3.0 | 12 | 14 | 2026-09-23 | 2026-09-25 | 1 | 2 | W2-03-C1 Curing disiram/ditutup minimal 7 hari True pending, W2-03-C2 Tidak ada retak susut besar / keropos True pending, W2-03-C3 Tanggal pembongkaran bekisting dicatat  pending | Perawatan beton (curing), Buka bekisting samping | site_engineer | site@sipro.co.id | project_manager | pm@sipro.co.id | blocked |  |  |  |  |  |  |  |  |  | 0 | 0 | 0 |  | 2026-09-10T04:26:41.815391+00:00 | 2026-09-10T04:26:41.825478+00:00 | W2-02 | True | HOLD POINT: bekisting jangan dibuka/dibebani terlalu cepat — samping 24 jam, beban berat 7 hari, kuat optimal 28 hari. | predecessor W2-02 'Pengecoran sloof, kolom praktis & talang beton' belum diverifikasi (status: blocked). | Bekisting samping minimal 24 jam setelah pengecoran |  |  |
| ffb34ccc-70d1-40cc-8d91-e07d0d17b864 | org-sipro | 7c197935-db63-4ab3-a7e4-7396e2ed74a7 | 3389c75b-e8e6-40bb-802f-8d5f188947b8 | A-05 | 9e11ab29-9799-452b-beb6-9d45eb81283f | W3-01 | Pasangan dinding bata merah | arsitektur | 3 | 6 | 8.0 | 15 | 21 | 2026-09-26 | 2026-10-03 | 3 | 3 | W3-01-C1 Pasangan tegak, lurus, dan siku True pending, W3-01-C2 Spesi terisi penuh (tidak ada rongga) True pending, W3-01-C3 Angkur kolom praktis terpasang tiap 6 lapis  pending | Pasangan bata merah, Kolom praktis lanjutan | site_engineer | site@sipro.co.id | project_manager | pm@sipro.co.id | blocked |  |  |  |  |  |  |  |  |  | 0 | 0 | 0 |  | 2026-09-10T04:26:41.815391+00:00 | 2026-09-10T04:26:41.825819+00:00 | W2-03 |  |  | predecessor W2-03 'Curing beton & pembongkaran bekisting' belum diverifikasi (status: blocked). | Cor sloof minimal 3–7 hari sebelum pasangan bata dimulai |  |  |
| d9bad1fd-d37a-4610-95fc-8ba80da01cbf | org-sipro | 7c197935-db63-4ab3-a7e4-7396e2ed74a7 | 3389c75b-e8e6-40bb-802f-8d5f188947b8 | A-05 | 9e11ab29-9799-452b-beb6-9d45eb81283f | W3-02 | Jalur plumbing & conduit listrik tanam (sebelum plester) | mep | 3 | 7 | 4.0 | 15 | 21 | 2026-09-26 | 2026-10-03 | 0 | 3 | W3-02-C1 Jalur air diuji tekan tanpa kebocoran True pending, W3-02-C2 Conduit utuh, tidak tertekuk/pecah True pending, W3-02-C3 Foto as-built jalur diambil sebelum ditutup True pending | Jalur air bersih & kotor tanam, Conduit listrik tanam | site_engineer | site@sipro.co.id | project_manager | pm@sipro.co.id | blocked |  |  |  |  |  |  |  |  |  | 0 | 0 | 0 |  | 2026-09-10T04:26:41.815391+00:00 | 2026-09-10T04:26:41.826120+00:00 | W3-01 | True | HOLD POINT: jangan plester sebelum jalur plumbing & conduit tanam selesai, diuji, dan difoto sebagai as-built. | predecessor W3-01 'Pasangan dinding bata merah' belum diverifikasi (status: blocked). |  |  |  |
| 8a4ab6ae-6151-4163-99ee-44296fb5f691 | org-sipro | 7c197935-db63-4ab3-a7e4-7396e2ed74a7 | 3389c75b-e8e6-40bb-802f-8d5f188947b8 | A-05 | 9e11ab29-9799-452b-beb6-9d45eb81283f | W4-01 | Ring balok & ring gevel | struktur | 4 | 8 | 6.0 | 22 | 24 | 2026-10-05 | 2026-10-07 | 0 | 2 | W4-01-C1 Pembesian ring balk sesuai gambar True pending, W4-01-C2 Pengecoran padat & elevasi rata True pending, W4-01-C3 Angkur kuda-kuda disiapkan  pending | Pembesian & bekisting ring balk, Pengecoran ring balk, Ring gevel | site_engineer | site@sipro.co.id | project_manager | pm@sipro.co.id | blocked |  |  |  |  |  |  |  |  |  | 0 | 0 | 0 |  | 2026-09-10T04:26:41.815391+00:00 | 2026-09-10T04:26:41.826437+00:00 | W3-01, W3-02 |  |  | predecessor W3-01 'Pasangan dinding bata merah' belum diverifikasi (status: blocked)., predecessor W3-02 'Jalur plumbing & conduit listrik tanam (sebelum plester)' belum diverifikasi (status: blocked). |  |  |  |
| 4fba86a9-42e6-4f93-afac-b27ce5db79e0 | org-sipro | 7c197935-db63-4ab3-a7e4-7396e2ed74a7 | 3389c75b-e8e6-40bb-802f-8d5f188947b8 | A-05 | 9e11ab29-9799-452b-beb6-9d45eb81283f | W4-02 | Rangka atap baja ringan, penutup atap, lisplank | arsitektur | 4 | 9 | 8.0 | 25 | 27 | 2026-10-08 | 2026-10-10 | 3 | 4 | W4-02-C1 Jarak kuda-kuda & reng sesuai spesifikasi True pending, W4-02-C2 Sambungan/screw lengkap dan kencang  pending, W4-02-C3 Tes siram air: tidak ada kebocoran True pending, W4-02-C4 Kemiringan talang mengalir, tidak menggenang True pending | Rangka atap baja ringan, Genteng metal / atap spandek, Lisplank | site_engineer | site@sipro.co.id | project_manager | pm@sipro.co.id | blocked |  |  |  |  |  |  |  |  |  | 0 | 0 | 0 |  | 2026-09-10T04:26:41.815391+00:00 | 2026-09-10T04:26:41.826747+00:00 | W4-01 | True | HOLD POINT: jangan lanjut plafon bila atap masih bocor — wajib TES SIRAM AIR dan cek kemiringan talang. | predecessor W4-01 'Ring balok & ring gevel' belum diverifikasi (status: blocked). | Ring balok perlu mengeras minimal 3 hari sebelum dibebani rangka atap |  |  |
| e5e4e9d4-22be-4b04-bfa8-d2f4726252ff | org-sipro | 7c197935-db63-4ab3-a7e4-7396e2ed74a7 | 3389c75b-e8e6-40bb-802f-8d5f188947b8 | A-05 | 9e11ab29-9799-452b-beb6-9d45eb81283f | W5-01 | Plester dinding | arsitektur | 5 | 10 | 6.0 | 28 | 32 | 2026-10-12 | 2026-10-16 | 3 | 3 | W5-01-C1 Permukaan rata, tegak, tidak bergelombang True pending, W5-01-C2 Sudut siku dan tajam  pending, W5-01-C3 Tidak ada bagian kosong/berongga saat diketuk True pending | Plester dinding dalam, Plester dinding luar | site_engineer | site@sipro.co.id | project_manager | pm@sipro.co.id | blocked |  |  |  |  |  |  |  |  |  | 0 | 0 | 0 |  | 2026-09-10T04:26:41.815391+00:00 | 2026-09-10T04:26:41.827244+00:00 | W3-02, W4-02 |  |  | predecessor W3-02 'Jalur plumbing & conduit listrik tanam (sebelum plester)' belum diverifikasi (status: blocked)., predecessor W4-02 'Rangka atap baja ringan, penutup atap, lisplank' belum diverifikasi (status: blocked). | Mortar bata harus stabil 3–5 hari agar plester tidak retak rambut |  |  |
| d7821f65-f801-499d-8e60-541537d040cf | org-sipro | 7c197935-db63-4ab3-a7e4-7396e2ed74a7 | 3389c75b-e8e6-40bb-802f-8d5f188947b8 | A-05 | 9e11ab29-9799-452b-beb6-9d45eb81283f | W5-02 | Acian dinding | arsitektur | 5 | 11 | 4.0 | 33 | 35 | 2026-10-17 | 2026-10-20 | 3 | 2 | W5-02-C1 Acian halus, tanpa retak rambut True pending, W5-02-C2 Tidak ada bagian mengelupas / berdebu  pending | Acian dinding dalam, Acian dinding luar | site_engineer | site@sipro.co.id | project_manager | pm@sipro.co.id | blocked |  |  |  |  |  |  |  |  |  | 0 | 0 | 0 |  | 2026-09-10T04:26:41.815391+00:00 | 2026-09-10T04:26:41.827760+00:00 | W5-01 | True | HOLD POINT: jangan mengecat saat dinding masih basah — acian minimal 7–14 hari sebelum cat (risiko cat menggelembung, lembab, jamur). | predecessor W5-01 'Plester dinding' belum diverifikasi (status: blocked). | Plester perlu 2–3 hari sebelum diaci |  |  |
| 90d6ca22-6b46-48dc-bf51-f033639581d4 | org-sipro | 7c197935-db63-4ab3-a7e4-7396e2ed74a7 | 3389c75b-e8e6-40bb-802f-8d5f188947b8 | A-05 | 9e11ab29-9799-452b-beb6-9d45eb81283f | W6-01 | Plafon (rangka hollow, gypsum, list) | arsitektur | 6 | 12 | 5.0 | 36 | 38 | 2026-10-21 | 2026-10-23 | 0 | 2 | W6-01-C1 Rangka hollow rata & kuat (tidak melendut) True pending, W6-01-C2 Sambungan gypsum di-compound rapi  pending, W6-01-C3 List gypsum lurus & rapat ke dinding  pending | Rangka hollow, Pemasangan gypsum, List gypsum | site_engineer | site@sipro.co.id | project_manager | pm@sipro.co.id | blocked |  |  |  |  |  |  |  |  |  | 0 | 0 | 0 |  | 2026-09-10T04:26:41.815391+00:00 | 2026-09-10T04:26:41.828245+00:00 | W4-02 |  |  | predecessor W4-02 'Rangka atap baja ringan, penutup atap, lisplank' belum diverifikasi (status: blocked). |  |  |  |
| a740b360-ffcc-4f65-96f1-c3f8311eab2e | org-sipro | 7c197935-db63-4ab3-a7e4-7396e2ed74a7 | 3389c75b-e8e6-40bb-802f-8d5f188947b8 | A-05 | 9e11ab29-9799-452b-beb6-9d45eb81283f | W6-02 | Kusen, daun pintu, jendela & kaca | arsitektur | 6 | 13 | 5.0 | 39 | 41 | 2026-10-24 | 2026-10-27 | 0 | 3 | W6-02-C1 Kusen tegak, terkunci, dan tidak goyang True pending, W6-02-C2 Pintu & jendela menutup rapat, kunci berfungsi True pending, W6-02-C3 Kaca tanpa gores/retak dan sealant rapi  pending | Kusen pintu, Daun pintu, Kusen jendela, Kaca | site_engineer | site@sipro.co.id | project_manager | pm@sipro.co.id | blocked |  |  |  |  |  |  |  |  |  | 0 | 0 | 0 |  | 2026-09-10T04:26:41.815391+00:00 | 2026-09-10T04:26:41.828864+00:00 | W5-02 |  |  | predecessor W5-02 'Acian dinding' belum diverifikasi (status: blocked). |  |  |  |
| 7958fdac-f48d-457d-be61-a6f8fc0e47d1 | org-sipro | 7c197935-db63-4ab3-a7e4-7396e2ed74a7 | 3389c75b-e8e6-40bb-802f-8d5f188947b8 | A-05 | 9e11ab29-9799-452b-beb6-9d45eb81283f | W7-01 | Keramik lantai, dinding KM & backsplash dapur | finishing | 7 | 14 | 7.0 | 42 | 45 | 2026-10-28 | 2026-10-31 | 0 | 4 | W7-01-C1 Nat lurus, seragam, dan terisi penuh True pending, W7-01-C2 Tidak kopong saat diketuk True pending, W7-01-C3 Kemiringan lantai KM mengarah ke floor drain True pending | Keramik lantai utama, Keramik kamar mandi, Keramik dinding KM, Keramik backsplash dapur | site_engineer | site@sipro.co.id | project_manager | pm@sipro.co.id | blocked |  |  |  |  |  |  |  |  |  | 0 | 0 | 0 |  | 2026-09-10T04:26:41.815391+00:00 | 2026-09-10T04:26:41.829321+00:00 | W5-02, W6-01 |  |  | predecessor W5-02 'Acian dinding' belum diverifikasi (status: blocked)., predecessor W6-01 'Plafon (rangka hollow, gypsum, list)' belum diverifikasi (status: blocked). |  |  |  |
| 06513816-e70e-45db-91fd-2569b892a088 | org-sipro | 7c197935-db63-4ab3-a7e4-7396e2ed74a7 | 3389c75b-e8e6-40bb-802f-8d5f188947b8 | A-05 | 9e11ab29-9799-452b-beb6-9d45eb81283f | W7-02 | Sanitasi & jalur air bersih (closet, kran, sink, septictank) | mep | 7 | 15 | 5.0 | 46 | 47 | 2026-11-02 | 2026-11-03 | 1 | 3 | W7-02-C1 Tes aliran air lancar di semua titik True pending, W7-02-C2 Tidak ada kebocoran pada sambungan True pending, W7-02-C3 Septictank & resapan sesuai spesifikasi  pending | Closet, Kran, Sink dapur, Septictank & resapan, Jalur air bersih | site_engineer | site@sipro.co.id | project_manager | pm@sipro.co.id | blocked |  |  |  |  |  |  |  |  |  | 0 | 0 | 0 |  | 2026-09-10T04:26:41.815391+00:00 | 2026-09-10T04:26:41.829774+00:00 | W7-01 |  |  | predecessor W7-01 'Keramik lantai, dinding KM & backsplash dapur' belum diverifikasi (status: blocked). | Nat keramik harus kering sebelum pemasangan sanitair |  |  |
| 4f7b5f55-c8c1-4257-a8a5-5ed13160063b | org-sipro | 7c197935-db63-4ab3-a7e4-7396e2ed74a7 | 3389c75b-e8e6-40bb-802f-8d5f188947b8 | A-05 | 9e11ab29-9799-452b-beb6-9d45eb81283f | W8-01 | Instalasi listrik (lampu, saklar, stop kontak) | mep | 8 | 16 | 4.0 | 48 | 50 | 2026-11-04 | 2026-11-06 | 0 | 3 | W8-01-C1 Semua titik diuji dan menyala True pending, W8-01-C2 Tidak ada kabel terbuka / sambungan liar True pending, W8-01-C3 MCB & grounding sesuai spesifikasi True pending | Lampu, Saklar, Stop kontak, Pengujian titik | site_engineer | site@sipro.co.id | project_manager | pm@sipro.co.id | blocked |  |  |  |  |  |  |  |  |  | 0 | 0 | 0 |  | 2026-09-10T04:26:41.815391+00:00 | 2026-09-10T04:26:41.830224+00:00 | W3-02, W6-01 |  |  | predecessor W3-02 'Jalur plumbing & conduit listrik tanam (sebelum plester)' belum diverifikasi (status: blocked)., predecessor W6-01 'Plafon (rangka hollow, gypsum, list)' belum diverifikasi (status: blocked). |  |  |  |
| c2eca0fc-8e55-4540-a835-bd223a6ba400 | org-sipro | 7c197935-db63-4ab3-a7e4-7396e2ed74a7 | 3389c75b-e8e6-40bb-802f-8d5f188947b8 | A-05 | 9e11ab29-9799-452b-beb6-9d45eb81283f | W8-02 | Pengecatan interior, eksterior, plafon & lisplank | finishing | 8 | 17 | 5.0 | 51 | 53 | 2026-11-07 | 2026-11-10 | 7 | 3 | W8-02-C1 Dinding kering saat diuji kelembaban True pending, W8-02-C2 Cat rata minimal 2 lapis, tidak belang True pending, W8-02-C3 Tidak ada cipratan pada kusen/keramik  pending | Cat interior, Cat eksterior, Cat plafon, Cat lisplank | site_engineer | site@sipro.co.id | project_manager | pm@sipro.co.id | blocked |  |  |  |  |  |  |  |  |  | 0 | 0 | 0 |  | 2026-09-10T04:26:41.815391+00:00 | 2026-09-10T04:26:41.830699+00:00 | W5-02, W6-01 | True | HOLD POINT: dinding wajib kering (uji lembab) sebelum cat dasar. | predecessor W5-02 'Acian dinding' belum diverifikasi (status: blocked)., predecessor W6-01 'Plafon (rangka hollow, gypsum, list)' belum diverifikasi (status: blocked). | Acian minimal 7–14 hari agar dinding kering sebelum dicat |  |  |
| f291ad11-0496-4631-b7db-0532d03e2b79 | org-sipro | 7c197935-db63-4ab3-a7e4-7396e2ed74a7 | 3389c75b-e8e6-40bb-802f-8d5f188947b8 | A-05 | 9e11ab29-9799-452b-beb6-9d45eb81283f | W8-03 | Pekerjaan luar (carport, dinding samping, taman) | lansekap | 8 | 18 | 3.0 | 54 | 54 | 2026-11-11 | 2026-11-11 | 0 | 2 | W8-03-C1 Carport rata, air tidak menggenang True pending, W8-03-C2 Area luar bersih dan rapi  pending | Carport, Dinding samping, Taman | site_engineer | site@sipro.co.id | project_manager | pm@sipro.co.id | blocked |  |  |  |  |  |  |  |  |  | 0 | 0 | 0 |  | 2026-09-10T04:26:41.815391+00:00 | 2026-09-10T04:26:41.831201+00:00 | W8-02 |  |  | predecessor W8-02 'Pengecatan interior, eksterior, plafon & lisplank' belum diverifikasi (status: blocked). |  |  |  |
| c80c1bdb-2ce8-4fe4-867e-aadc414a3edd | org-sipro | 7c197935-db63-4ab3-a7e4-7396e2ed74a7 | 3389c75b-e8e6-40bb-802f-8d5f188947b8 | A-05 | 9e11ab29-9799-452b-beb6-9d45eb81283f | W9-01 | Pembersihan akhir & perbaikan defect | finishing | 9 | 19 | 3.0 | 55 | 58 | 2026-11-12 | 2026-11-16 | 0 | 3 | W9-01-C1 Semua temuan punch list sudah ditutup True pending, W9-01-C2 Bebas sisa material & puing True pending | Pembersihan akhir, Repair defect / punch list | site_engineer | site@sipro.co.id | project_manager | pm@sipro.co.id | blocked |  |  |  |  |  |  |  |  |  | 0 | 0 | 0 |  | 2026-09-10T04:26:41.815391+00:00 | 2026-09-10T04:26:41.831579+00:00 | W8-01, W8-02, W8-03 |  |  | predecessor W8-01 'Instalasi listrik (lampu, saklar, stop kontak)' belum diverifikasi (status: blocked)., predecessor W8-02 'Pengecatan interior, eksterior, plafon & lisplank' belum diverifikasi (status: blocked)., predecessor W8-03 'Pekerjaan luar (carport, dinding samping, taman)' belum diverifikasi (status: blocked). |  |  |  |
| d3411774-0db9-46c3-a4c4-5d804fbadd88 | org-sipro | 7c197935-db63-4ab3-a7e4-7396e2ed74a7 | 3389c75b-e8e6-40bb-802f-8d5f188947b8 | A-05 | 9e11ab29-9799-452b-beb6-9d45eb81283f | W9-02 | Final QC & siap akad / serah terima | finishing | 9 | 20 | 2.0 | 59 | 60 | 2026-11-17 | 2026-11-18 | 0 | 4 | W9-02-C1 Air & listrik berfungsi normal True pending, W9-02-C2 Tidak ada kebocoran atap/plumbing True pending, W9-02-C3 Kunci, dokumen, dan manual siap diserahkan True pending, W9-02-C4 Pembeli/QC menandatangani hasil final  pending | Final QC, Serah terima kunci & dokumen | site_engineer | site@sipro.co.id | project_manager | pm@sipro.co.id | blocked |  |  |  |  |  |  |  |  |  | 0 | 0 | 0 |  | 2026-09-10T04:26:41.815391+00:00 | 2026-09-10T04:26:41.831927+00:00 | W9-01 | True | HOLD POINT: unit tidak boleh dinyatakan siap serah terima sebelum Final QC lulus (air, listrik, bocor, kunci, dokumen). | predecessor W9-01 'Pembersihan akhir & perbaikan defect' belum diverifikasi (status: blocked). |  | True |  |
| 580ecb52-17f3-443b-95ae-5c34a21a9b85 | org-sipro | 7c197935-db63-4ab3-a7e4-7396e2ed74a7 | 19279cac-77af-4c85-8d81-4f54c942148a | A-02 | 9e26ce1b-cc3f-4153-8677-7fff806093c4 | W1-01 | Pekerjaan persiapan (pembersihan, pengukuran, bowplank) | persiapan | 1 | 1 | 2.0 | 1 | 2 | 2026-08-27 | 2026-08-28 | 0 | 2 | W1-01-C1 As bangunan sesuai siteplan True pass, W1-01-C2 Elevasi lantai aman dari jalan & drainase True pass, W1-01-C3 Bowplank kuat, siku, dan tidak mudah bergeser  pass | Pembersihan lokasi, Pengukuran, Pemasangan bowplank | site_engineer | site@sipro.co.id | project_manager | pm@sipro.co.id | done | 4bb252f6-3400-44f8-b489-3e235e0f948c 2087f9d0f1ccb45c85b0399500e01be5f711d64c5fba01b996a15d7375e6f091 contoh-w1-01-1.png image/jpeg 10917 seed 2026-09-10T04:26:40.117830+00:00 CONTOH · unit A-02 · Contoh bukti: Pekerjaan persiapan (pembersihan, pengukuran (  seed 2026-09-10T04:26:40.118267+00:00, e47522ec-4c18-4a5a-bac3-b24ce1c5c681 148822ba3d40c36f15f1276c368f4d7f4625b59a57176374371f885c1378994a contoh-w1-01-2.png image/jpeg 11400 seed 2026-09-10T04:26:40.227254+00:00 CONTOH · unit A-02 · Contoh bukti: Pekerjaan persiapan (pembersihan, pengukuran (  seed 2026-09-10T04:26:40.227719+00:00 | Data awal demo: pekerjaan dikerjakan sesuai checklist mutu; foto bukti berlabel CONTOH. | 2026-08-28T09:30:00+00:00 submit site@sipro.co.id Seed data awal 2, 2026-08-28T09:30:00+00:00 verify pm@sipro.co.id Seed data awal | 2026-08-27T01:00:00+00:00 | 2026-08-28T09:30:00+00:00 | site@sipro.co.id | 2026-08-28T09:30:00+00:00 | pm@sipro.co.id | Diverifikasi pada penyiapan data awal. | 0 | 0 | 0 | 4a5ba119-96e1-4702-9c85-3e02b73f6e5e | 2026-09-10T04:26:39.919945+00:00 | 2026-09-10T04:26:40.227735+00:00 |  |  |  |  |  |  |  |
| 3a68bbed-cdd3-4269-b2a5-b4d97888234f | org-sipro | 7c197935-db63-4ab3-a7e4-7396e2ed74a7 | 19279cac-77af-4c85-8d81-4f54c942148a | A-02 | 9e26ce1b-cc3f-4153-8677-7fff806093c4 | W1-02 | Pekerjaan tanah & pondasi (galian, urugan pasir, batu belah) | struktur | 1 | 2 | 8.0 | 3 | 7 | 2026-08-29 | 2026-09-03 | 0 | 3 | W1-02-C1 Kedalaman & lebar galian sesuai gambar True pass, W1-02-C2 Urugan pasir dipadatkan dan rata  pass, W1-02-C3 Pasangan batu belah terkunci penuh, spesi mengisi rongga True pass, W1-02-C4 Tidak ada bagian pondasi yang menggantung/ambles True pass | Galian pondasi, Urugan pasir, Pasangan batu belah | site_engineer | site@sipro.co.id | project_manager | pm@sipro.co.id | done | 865d4961-59e7-4f46-8ab2-994b413400e8 417ca028cb60999276d45f71d0f497fe1eadec6f476b4da1b87fc6810cf7d584 contoh-w1-02-1.png image/jpeg 10858 seed 2026-09-10T04:26:40.419102+00:00 CONTOH · unit A-02 · Contoh bukti: Pekerjaan tanah & pondasi (galian, urugan pa (  seed 2026-09-10T04:26:40.419582+00:00, 6a21d9b0-f72c-42fb-839c-82eac79b6fe5 4ba3ce24937ee86be3d0ca42b6270d9f1c54b1a5b2d72f20ed92f0227261c986 contoh-w1-02-2.png image/jpeg 11347 seed 2026-09-10T04:26:40.519192+00:00 CONTOH · unit A-02 · Contoh bukti: Pekerjaan tanah & pondasi (galian, urugan pa (  seed 2026-09-10T04:26:40.519621+00:00, 6da6433c-d482-46c7-b6e7-b4519c67e9bc 803ae72abe0517fc38b74ff31efeddbc598586bc0f561d58be63bc6907980b0a contoh-w1-02-3.png image/jpeg 10965 seed 2026-09-10T04:26:40.615929+00:00 CONTOH · unit A-02 · Contoh bukti: Pekerjaan tanah & pondasi (galian, urugan pa (  seed 2026-09-10T04:26:40.616331+00:00 | Data awal demo: pekerjaan dikerjakan sesuai checklist mutu; foto bukti berlabel CONTOH. | 2026-09-03T09:30:00+00:00 submit site@sipro.co.id Seed data awal 3, 2026-09-03T09:30:00+00:00 verify pm@sipro.co.id Seed data awal | 2026-08-29T01:00:00+00:00 | 2026-09-03T09:30:00+00:00 | site@sipro.co.id | 2026-09-03T09:30:00+00:00 | pm@sipro.co.id | Diverifikasi pada penyiapan data awal. | 0 | 0 | 0 |  | 2026-09-10T04:26:39.919945+00:00 | 2026-09-10T04:26:40.616342+00:00 | W1-01 | True | HOLD POINT: tidak boleh lanjut sloof sebelum pondasi benar-benar terkunci (pasangan batu belah penuh, tidak ada rongga). | predecessor W1-01 'Pekerjaan persiapan (pembersihan, pengukuran, bowplank)' belum diverifikasi (status: blocked). |  |  |  |
| 7f4a09a1-a492-4f60-8eac-30a9891333d8 | org-sipro | 7c197935-db63-4ab3-a7e4-7396e2ed74a7 | 19279cac-77af-4c85-8d81-4f54c942148a | A-02 | 9e26ce1b-cc3f-4153-8677-7fff806093c4 | W2-01 | Pembesian & bekisting sloof + kolom praktis | struktur | 2 | 3 | 6.0 | 8 | 10 | 2026-09-04 | 2026-09-07 | 2 | 3 | W2-01-C1 Diameter & jumlah besi sesuai gambar True pending, W2-01-C2 Beton decking (selimut beton) terpasang True pending, W2-01-C3 Bekisting kokoh, lurus, tidak bocor  pending | Pembesian sloof, Pembesian kolom praktis, Pemasangan bekisting | site_engineer | site@sipro.co.id | project_manager | pm@sipro.co.id | ready |  |  |  |  |  |  |  |  |  | 0 | 0 | 0 | e5fa7776-15fc-44c8-8296-b9e07852db44 | 2026-09-10T04:26:39.919945+00:00 | 2026-09-10T04:26:40.618020+00:00 | W1-02 |  |  |  | Pondasi batu kali minimal 1–2 hari sebelum sloof dikerjakan |  | 2026-09-05T09:30:00+00:00 |
| c11537ff-4989-4e63-a042-c07c12915477 | org-sipro | 7c197935-db63-4ab3-a7e4-7396e2ed74a7 | 19279cac-77af-4c85-8d81-4f54c942148a | A-02 | 9e26ce1b-cc3f-4153-8677-7fff806093c4 | W2-02 | Pengecoran sloof, kolom praktis & talang beton | struktur | 2 | 4 | 6.0 | 11 | 11 | 2026-09-08 | 2026-09-08 | 0 | 2 | W2-02-C1 Mutu/slump beton sesuai spesifikasi True pending, W2-02-C2 Pengecoran padat, tidak keropos/segregasi True pending, W2-02-C3 Tanggal & jam pengecoran dicatat True pending | Pengecoran sloof, Pengecoran kolom praktis, Talang beton | site_engineer | site@sipro.co.id | project_manager | pm@sipro.co.id | blocked |  |  |  |  |  |  |  |  |  | 0 | 0 | 0 |  | 2026-09-10T04:26:39.919945+00:00 | 2026-09-10T04:26:39.930798+00:00 | W2-01 |  |  | predecessor W2-01 'Pembesian & bekisting sloof + kolom praktis' belum diverifikasi (status: blocked). |  |  |  |
| 2fd9c8f5-8af1-4529-a7b4-8d37ca354835 | org-sipro | 7c197935-db63-4ab3-a7e4-7396e2ed74a7 | 19279cac-77af-4c85-8d81-4f54c942148a | A-02 | 9e26ce1b-cc3f-4153-8677-7fff806093c4 | W2-03 | Curing beton & pembongkaran bekisting | struktur | 2 | 5 | 3.0 | 12 | 14 | 2026-09-09 | 2026-09-11 | 1 | 2 | W2-03-C1 Curing disiram/ditutup minimal 7 hari True pending, W2-03-C2 Tidak ada retak susut besar / keropos True pending, W2-03-C3 Tanggal pembongkaran bekisting dicatat  pending | Perawatan beton (curing), Buka bekisting samping | site_engineer | site@sipro.co.id | project_manager | pm@sipro.co.id | blocked |  |  |  |  |  |  |  |  |  | 0 | 0 | 0 |  | 2026-09-10T04:26:39.919945+00:00 | 2026-09-10T04:26:39.931269+00:00 | W2-02 | True | HOLD POINT: bekisting jangan dibuka/dibebani terlalu cepat — samping 24 jam, beban berat 7 hari, kuat optimal 28 hari. | predecessor W2-02 'Pengecoran sloof, kolom praktis & talang beton' belum diverifikasi (status: blocked). | Bekisting samping minimal 24 jam setelah pengecoran |  |  |
| b89effa4-c7bb-43cf-8c06-9c45a131e117 | org-sipro | 7c197935-db63-4ab3-a7e4-7396e2ed74a7 | 19279cac-77af-4c85-8d81-4f54c942148a | A-02 | 9e26ce1b-cc3f-4153-8677-7fff806093c4 | W3-01 | Pasangan dinding bata merah | arsitektur | 3 | 6 | 8.0 | 15 | 21 | 2026-09-12 | 2026-09-19 | 3 | 3 | W3-01-C1 Pasangan tegak, lurus, dan siku True pending, W3-01-C2 Spesi terisi penuh (tidak ada rongga) True pending, W3-01-C3 Angkur kolom praktis terpasang tiap 6 lapis  pending | Pasangan bata merah, Kolom praktis lanjutan | site_engineer | site@sipro.co.id | project_manager | pm@sipro.co.id | blocked |  |  |  |  |  |  |  |  |  | 0 | 0 | 0 |  | 2026-09-10T04:26:39.919945+00:00 | 2026-09-10T04:26:39.931726+00:00 | W2-03 |  |  | predecessor W2-03 'Curing beton & pembongkaran bekisting' belum diverifikasi (status: blocked). | Cor sloof minimal 3–7 hari sebelum pasangan bata dimulai |  |  |
| f227fe58-9779-40c0-8ca0-614cec23c891 | org-sipro | 7c197935-db63-4ab3-a7e4-7396e2ed74a7 | 19279cac-77af-4c85-8d81-4f54c942148a | A-02 | 9e26ce1b-cc3f-4153-8677-7fff806093c4 | W3-02 | Jalur plumbing & conduit listrik tanam (sebelum plester) | mep | 3 | 7 | 4.0 | 15 | 21 | 2026-09-12 | 2026-09-19 | 0 | 3 | W3-02-C1 Jalur air diuji tekan tanpa kebocoran True pending, W3-02-C2 Conduit utuh, tidak tertekuk/pecah True pending, W3-02-C3 Foto as-built jalur diambil sebelum ditutup True pending | Jalur air bersih & kotor tanam, Conduit listrik tanam | site_engineer | site@sipro.co.id | project_manager | pm@sipro.co.id | blocked |  |  |  |  |  |  |  |  |  | 0 | 0 | 0 |  | 2026-09-10T04:26:39.919945+00:00 | 2026-09-10T04:26:39.932153+00:00 | W3-01 | True | HOLD POINT: jangan plester sebelum jalur plumbing & conduit tanam selesai, diuji, dan difoto sebagai as-built. | predecessor W3-01 'Pasangan dinding bata merah' belum diverifikasi (status: blocked). |  |  |  |
| 2dc9f1ee-e042-4725-9d8f-612260e9ed4d | org-sipro | 7c197935-db63-4ab3-a7e4-7396e2ed74a7 | 19279cac-77af-4c85-8d81-4f54c942148a | A-02 | 9e26ce1b-cc3f-4153-8677-7fff806093c4 | W4-01 | Ring balok & ring gevel | struktur | 4 | 8 | 6.0 | 22 | 24 | 2026-09-21 | 2026-09-23 | 0 | 2 | W4-01-C1 Pembesian ring balk sesuai gambar True pending, W4-01-C2 Pengecoran padat & elevasi rata True pending, W4-01-C3 Angkur kuda-kuda disiapkan  pending | Pembesian & bekisting ring balk, Pengecoran ring balk, Ring gevel | site_engineer | site@sipro.co.id | project_manager | pm@sipro.co.id | blocked |  |  |  |  |  |  |  |  |  | 0 | 0 | 0 |  | 2026-09-10T04:26:39.919945+00:00 | 2026-09-10T04:26:39.932557+00:00 | W3-01, W3-02 |  |  | predecessor W3-01 'Pasangan dinding bata merah' belum diverifikasi (status: blocked)., predecessor W3-02 'Jalur plumbing & conduit listrik tanam (sebelum plester)' belum diverifikasi (status: blocked). |  |  |  |
| 40e74446-2281-4698-89ed-d590f6583139 | org-sipro | 7c197935-db63-4ab3-a7e4-7396e2ed74a7 | 19279cac-77af-4c85-8d81-4f54c942148a | A-02 | 9e26ce1b-cc3f-4153-8677-7fff806093c4 | W4-02 | Rangka atap baja ringan, penutup atap, lisplank | arsitektur | 4 | 9 | 8.0 | 25 | 27 | 2026-09-24 | 2026-09-26 | 3 | 4 | W4-02-C1 Jarak kuda-kuda & reng sesuai spesifikasi True pending, W4-02-C2 Sambungan/screw lengkap dan kencang  pending, W4-02-C3 Tes siram air: tidak ada kebocoran True pending, W4-02-C4 Kemiringan talang mengalir, tidak menggenang True pending | Rangka atap baja ringan, Genteng metal / atap spandek, Lisplank | site_engineer | site@sipro.co.id | project_manager | pm@sipro.co.id | blocked |  |  |  |  |  |  |  |  |  | 0 | 0 | 0 |  | 2026-09-10T04:26:39.919945+00:00 | 2026-09-10T04:26:39.933037+00:00 | W4-01 | True | HOLD POINT: jangan lanjut plafon bila atap masih bocor — wajib TES SIRAM AIR dan cek kemiringan talang. | predecessor W4-01 'Ring balok & ring gevel' belum diverifikasi (status: blocked). | Ring balok perlu mengeras minimal 3 hari sebelum dibebani rangka atap |  |  |
| 0d6ec8a7-9613-4fe2-9fe7-1a54175d1f2c | org-sipro | 7c197935-db63-4ab3-a7e4-7396e2ed74a7 | 19279cac-77af-4c85-8d81-4f54c942148a | A-02 | 9e26ce1b-cc3f-4153-8677-7fff806093c4 | W5-01 | Plester dinding | arsitektur | 5 | 10 | 6.0 | 28 | 32 | 2026-09-28 | 2026-10-02 | 3 | 3 | W5-01-C1 Permukaan rata, tegak, tidak bergelombang True pending, W5-01-C2 Sudut siku dan tajam  pending, W5-01-C3 Tidak ada bagian kosong/berongga saat diketuk True pending | Plester dinding dalam, Plester dinding luar | site_engineer | site@sipro.co.id | project_manager | pm@sipro.co.id | blocked |  |  |  |  |  |  |  |  |  | 0 | 0 | 0 |  | 2026-09-10T04:26:39.919945+00:00 | 2026-09-10T04:26:40.011949+00:00 | W3-02, W4-02 |  |  | predecessor W3-02 'Jalur plumbing & conduit listrik tanam (sebelum plester)' belum diverifikasi (status: blocked)., predecessor W4-02 'Rangka atap baja ringan, penutup atap, lisplank' belum diverifikasi (status: blocked). | Mortar bata harus stabil 3–5 hari agar plester tidak retak rambut |  |  |

| id | org_id | project_id | unit_id | unit_code | schedule_id | step_code | name | work_category | week | order | weight | day_from | day_to | planned_start | planned_finish | wait_days | min_photos | checklist | tasks | assignee_role | assigned_to | verify_role | verifier_hint | status | evidence | note | history | started_at | submitted_at | submitted_by | verified_at | verified_by | verify_note | rework_count | late_days | escalation_level | task_id | created_at | updated_at | predecessors | hold_point | hold_note | gate_reasons | wait_reason | handover_gate |
| --- | --- | --- | --- | --- | --- | --- | --- | --- | --- | --- | --- | --- | --- | --- | --- | --- | --- | --- | --- | --- | --- | --- | --- | --- | --- | --- | --- | --- | --- | --- | --- | --- | --- | --- | --- | --- | --- | --- | --- | --- | --- | --- | --- | --- | --- |
| 601c8503-4301-4436-bc0d-020ae70f67fc | org-sipro | 7c197935-db63-4ab3-a7e4-7396e2ed74a7 | 19279cac-77af-4c85-8d81-4f54c942148a | A-02 | 9e26ce1b-cc3f-4153-8677-7fff806093c4 | W5-02 | Acian dinding | arsitektur | 5 | 11 | 4.0 | 33 | 35 | 2026-10-03 | 2026-10-06 | 3 | 2 | W5-02-C1 Acian halus, tanpa retak rambut True pending, W5-02-C2 Tidak ada bagian mengelupas / berdebu  pending | Acian dinding dalam, Acian dinding luar | site_engineer | site@sipro.co.id | project_manager | pm@sipro.co.id | blocked |  |  |  |  |  |  |  |  |  | 0 | 0 | 0 |  | 2026-09-10T04:26:39.919945+00:00 | 2026-09-10T04:26:40.012899+00:00 | W5-01 | True | HOLD POINT: jangan mengecat saat dinding masih basah — acian minimal 7–14 hari sebelum cat (risiko cat menggelembung, lembab, jamur). | predecessor W5-01 'Plester dinding' belum diverifikasi (status: blocked). | Plester perlu 2–3 hari sebelum diaci |  |
| 699793e5-e3f7-4410-92c7-99c73bd96254 | org-sipro | 7c197935-db63-4ab3-a7e4-7396e2ed74a7 | 19279cac-77af-4c85-8d81-4f54c942148a | A-02 | 9e26ce1b-cc3f-4153-8677-7fff806093c4 | W6-01 | Plafon (rangka hollow, gypsum, list) | arsitektur | 6 | 12 | 5.0 | 36 | 38 | 2026-10-07 | 2026-10-09 | 0 | 2 | W6-01-C1 Rangka hollow rata & kuat (tidak melendut) True pending, W6-01-C2 Sambungan gypsum di-compound rapi  pending, W6-01-C3 List gypsum lurus & rapat ke dinding  pending | Rangka hollow, Pemasangan gypsum, List gypsum | site_engineer | site@sipro.co.id | project_manager | pm@sipro.co.id | blocked |  |  |  |  |  |  |  |  |  | 0 | 0 | 0 |  | 2026-09-10T04:26:39.919945+00:00 | 2026-09-10T04:26:40.013491+00:00 | W4-02 |  |  | predecessor W4-02 'Rangka atap baja ringan, penutup atap, lisplank' belum diverifikasi (status: blocked). |  |  |
| 8730b410-3934-4777-8c90-4986ca8fd81f | org-sipro | 7c197935-db63-4ab3-a7e4-7396e2ed74a7 | 19279cac-77af-4c85-8d81-4f54c942148a | A-02 | 9e26ce1b-cc3f-4153-8677-7fff806093c4 | W6-02 | Kusen, daun pintu, jendela & kaca | arsitektur | 6 | 13 | 5.0 | 39 | 41 | 2026-10-10 | 2026-10-13 | 0 | 3 | W6-02-C1 Kusen tegak, terkunci, dan tidak goyang True pending, W6-02-C2 Pintu & jendela menutup rapat, kunci berfungsi True pending, W6-02-C3 Kaca tanpa gores/retak dan sealant rapi  pending | Kusen pintu, Daun pintu, Kusen jendela, Kaca | site_engineer | site@sipro.co.id | project_manager | pm@sipro.co.id | blocked |  |  |  |  |  |  |  |  |  | 0 | 0 | 0 |  | 2026-09-10T04:26:39.919945+00:00 | 2026-09-10T04:26:40.013995+00:00 | W5-02 |  |  | predecessor W5-02 'Acian dinding' belum diverifikasi (status: blocked). |  |  |
| 0dc33940-7116-4bb0-8bb1-11ffc17bbdc3 | org-sipro | 7c197935-db63-4ab3-a7e4-7396e2ed74a7 | 19279cac-77af-4c85-8d81-4f54c942148a | A-02 | 9e26ce1b-cc3f-4153-8677-7fff806093c4 | W7-01 | Keramik lantai, dinding KM & backsplash dapur | finishing | 7 | 14 | 7.0 | 42 | 45 | 2026-10-14 | 2026-10-17 | 0 | 4 | W7-01-C1 Nat lurus, seragam, dan terisi penuh True pending, W7-01-C2 Tidak kopong saat diketuk True pending, W7-01-C3 Kemiringan lantai KM mengarah ke floor drain True pending | Keramik lantai utama, Keramik kamar mandi, Keramik dinding KM, Keramik backsplash dapur | site_engineer | site@sipro.co.id | project_manager | pm@sipro.co.id | blocked |  |  |  |  |  |  |  |  |  | 0 | 0 | 0 |  | 2026-09-10T04:26:39.919945+00:00 | 2026-09-10T04:26:40.014451+00:00 | W5-02, W6-01 |  |  | predecessor W5-02 'Acian dinding' belum diverifikasi (status: blocked)., predecessor W6-01 'Plafon (rangka hollow, gypsum, list)' belum diverifikasi (status: blocked). |  |  |
| 4ee6f72f-e386-42e5-87f9-b9944d747db5 | org-sipro | 7c197935-db63-4ab3-a7e4-7396e2ed74a7 | 19279cac-77af-4c85-8d81-4f54c942148a | A-02 | 9e26ce1b-cc3f-4153-8677-7fff806093c4 | W7-02 | Sanitasi & jalur air bersih (closet, kran, sink, septictank) | mep | 7 | 15 | 5.0 | 46 | 47 | 2026-10-19 | 2026-10-20 | 1 | 3 | W7-02-C1 Tes aliran air lancar di semua titik True pending, W7-02-C2 Tidak ada kebocoran pada sambungan True pending, W7-02-C3 Septictank & resapan sesuai spesifikasi  pending | Closet, Kran, Sink dapur, Septictank & resapan, Jalur air bersih | site_engineer | site@sipro.co.id | project_manager | pm@sipro.co.id | blocked |  |  |  |  |  |  |  |  |  | 0 | 0 | 0 |  | 2026-09-10T04:26:39.919945+00:00 | 2026-09-10T04:26:40.014941+00:00 | W7-01 |  |  | predecessor W7-01 'Keramik lantai, dinding KM & backsplash dapur' belum diverifikasi (status: blocked). | Nat keramik harus kering sebelum pemasangan sanitair |  |
| 4f44d710-4ae5-452c-b293-ac7a9bf42a23 | org-sipro | 7c197935-db63-4ab3-a7e4-7396e2ed74a7 | 19279cac-77af-4c85-8d81-4f54c942148a | A-02 | 9e26ce1b-cc3f-4153-8677-7fff806093c4 | W8-01 | Instalasi listrik (lampu, saklar, stop kontak) | mep | 8 | 16 | 4.0 | 48 | 50 | 2026-10-21 | 2026-10-23 | 0 | 3 | W8-01-C1 Semua titik diuji dan menyala True pending, W8-01-C2 Tidak ada kabel terbuka / sambungan liar True pending, W8-01-C3 MCB & grounding sesuai spesifikasi True pending | Lampu, Saklar, Stop kontak, Pengujian titik | site_engineer | site@sipro.co.id | project_manager | pm@sipro.co.id | blocked |  |  |  |  |  |  |  |  |  | 0 | 0 | 0 |  | 2026-09-10T04:26:39.919945+00:00 | 2026-09-10T04:26:40.015416+00:00 | W3-02, W6-01 |  |  | predecessor W3-02 'Jalur plumbing & conduit listrik tanam (sebelum plester)' belum diverifikasi (status: blocked)., predecessor W6-01 'Plafon (rangka hollow, gypsum, list)' belum diverifikasi (status: blocked). |  |  |
| c20d1aec-a149-40a0-b648-f3422371c492 | org-sipro | 7c197935-db63-4ab3-a7e4-7396e2ed74a7 | 19279cac-77af-4c85-8d81-4f54c942148a | A-02 | 9e26ce1b-cc3f-4153-8677-7fff806093c4 | W8-02 | Pengecatan interior, eksterior, plafon & lisplank | finishing | 8 | 17 | 5.0 | 51 | 53 | 2026-10-24 | 2026-10-27 | 7 | 3 | W8-02-C1 Dinding kering saat diuji kelembaban True pending, W8-02-C2 Cat rata minimal 2 lapis, tidak belang True pending, W8-02-C3 Tidak ada cipratan pada kusen/keramik  pending | Cat interior, Cat eksterior, Cat plafon, Cat lisplank | site_engineer | site@sipro.co.id | project_manager | pm@sipro.co.id | blocked |  |  |  |  |  |  |  |  |  | 0 | 0 | 0 |  | 2026-09-10T04:26:39.919945+00:00 | 2026-09-10T04:26:40.015912+00:00 | W5-02, W6-01 | True | HOLD POINT: dinding wajib kering (uji lembab) sebelum cat dasar. | predecessor W5-02 'Acian dinding' belum diverifikasi (status: blocked)., predecessor W6-01 'Plafon (rangka hollow, gypsum, list)' belum diverifikasi (status: blocked). | Acian minimal 7–14 hari agar dinding kering sebelum dicat |  |
| c38f13cf-d84a-4a07-a181-6f2357613dd9 | org-sipro | 7c197935-db63-4ab3-a7e4-7396e2ed74a7 | 19279cac-77af-4c85-8d81-4f54c942148a | A-02 | 9e26ce1b-cc3f-4153-8677-7fff806093c4 | W8-03 | Pekerjaan luar (carport, dinding samping, taman) | lansekap | 8 | 18 | 3.0 | 54 | 54 | 2026-10-28 | 2026-10-28 | 0 | 2 | W8-03-C1 Carport rata, air tidak menggenang True pending, W8-03-C2 Area luar bersih dan rapi  pending | Carport, Dinding samping, Taman | site_engineer | site@sipro.co.id | project_manager | pm@sipro.co.id | blocked |  |  |  |  |  |  |  |  |  | 0 | 0 | 0 |  | 2026-09-10T04:26:39.919945+00:00 | 2026-09-10T04:26:40.016263+00:00 | W8-02 |  |  | predecessor W8-02 'Pengecatan interior, eksterior, plafon & lisplank' belum diverifikasi (status: blocked). |  |  |
| b003bc76-814a-4dc4-ac11-c6d14d5fc74f | org-sipro | 7c197935-db63-4ab3-a7e4-7396e2ed74a7 | 19279cac-77af-4c85-8d81-4f54c942148a | A-02 | 9e26ce1b-cc3f-4153-8677-7fff806093c4 | W9-01 | Pembersihan akhir & perbaikan defect | finishing | 9 | 19 | 3.0 | 55 | 58 | 2026-10-29 | 2026-11-02 | 0 | 3 | W9-01-C1 Semua temuan punch list sudah ditutup True pending, W9-01-C2 Bebas sisa material & puing True pending | Pembersihan akhir, Repair defect / punch list | site_engineer | site@sipro.co.id | project_manager | pm@sipro.co.id | blocked |  |  |  |  |  |  |  |  |  | 0 | 0 | 0 |  | 2026-09-10T04:26:39.919945+00:00 | 2026-09-10T04:26:40.016629+00:00 | W8-01, W8-02, W8-03 |  |  | predecessor W8-01 'Instalasi listrik (lampu, saklar, stop kontak)' belum diverifikasi (status: blocked)., predecessor W8-02 'Pengecatan interior, eksterior, plafon & lisplank' belum diverifikasi (status: blocked)., predecessor W8-03 'Pekerjaan luar (carport, dinding samping, taman)' belum diverifikasi (status: blocked). |  |  |
| 6e1a14fc-644a-43ee-b270-bcd86b0f9022 | org-sipro | 7c197935-db63-4ab3-a7e4-7396e2ed74a7 | 19279cac-77af-4c85-8d81-4f54c942148a | A-02 | 9e26ce1b-cc3f-4153-8677-7fff806093c4 | W9-02 | Final QC & siap akad / serah terima | finishing | 9 | 20 | 2.0 | 59 | 60 | 2026-11-03 | 2026-11-04 | 0 | 4 | W9-02-C1 Air & listrik berfungsi normal True pending, W9-02-C2 Tidak ada kebocoran atap/plumbing True pending, W9-02-C3 Kunci, dokumen, dan manual siap diserahkan True pending, W9-02-C4 Pembeli/QC menandatangani hasil final  pending | Final QC, Serah terima kunci & dokumen | site_engineer | site@sipro.co.id | project_manager | pm@sipro.co.id | blocked |  |  |  |  |  |  |  |  |  | 0 | 0 | 0 |  | 2026-09-10T04:26:39.919945+00:00 | 2026-09-10T04:26:40.016940+00:00 | W9-01 | True | HOLD POINT: unit tidak boleh dinyatakan siap serah terima sebelum Final QC lulus (air, listrik, bocor, kunci, dokumen). | predecessor W9-01 'Pembersihan akhir & perbaikan defect' belum diverifikasi (status: blocked). |  | True |
| 7b388190-8654-4819-8400-46ccae1677de | org-sipro | 7c197935-db63-4ab3-a7e4-7396e2ed74a7 | 84ea405b-f2df-4262-b001-7736369c16bc | A-04 | edce8b37-d810-4465-9f1a-3c994f453455 | W1-01 | Pekerjaan persiapan (pembersihan, pengukuran, bowplank) | persiapan | 1 | 1 | 2.0 | 1 | 2 | 2026-09-03 | 2026-09-04 | 0 | 2 | W1-01-C1 As bangunan sesuai siteplan True pass, W1-01-C2 Elevasi lantai aman dari jalan & drainase True pass, W1-01-C3 Bowplank kuat, siku, dan tidak mudah bergeser  pass | Pembersihan lokasi, Pengukuran, Pemasangan bowplank | site_engineer | site@sipro.co.id | project_manager | pm@sipro.co.id | done | 3922d7bf-5840-4927-a981-c35854ca7db6 2087f9d0f1ccb45c85b0399500e01be5f711d64c5fba01b996a15d7375e6f091 contoh-w1-01-1.png image/jpeg 10915 seed 2026-09-10T04:26:40.834349+00:00 CONTOH · unit A-04 · Contoh bukti: Pekerjaan persiapan (pembersihan, pengukuran (  seed 2026-09-10T04:26:40.834762+00:00, 1987f3b5-4c54-4a80-b56d-73b95f251c7b 148822ba3d40c36f15f1276c368f4d7f4625b59a57176374371f885c1378994a contoh-w1-01-2.png image/jpeg 11397 seed 2026-09-10T04:26:40.921189+00:00 CONTOH · unit A-04 · Contoh bukti: Pekerjaan persiapan (pembersihan, pengukuran (  seed 2026-09-10T04:26:40.921570+00:00 | Data awal demo: pekerjaan dikerjakan sesuai checklist mutu; foto bukti berlabel CONTOH. | 2026-09-04T09:30:00+00:00 submit site@sipro.co.id Seed data awal 2, 2026-09-04T09:30:00+00:00 verify pm@sipro.co.id Seed data awal | 2026-09-03T01:00:00+00:00 | 2026-09-04T09:30:00+00:00 | site@sipro.co.id | 2026-09-04T09:30:00+00:00 | pm@sipro.co.id | Diverifikasi pada penyiapan data awal. | 0 | 0 | 0 | 2c2f9f7d-d1e7-405d-abf4-9bec7ca383d2 | 2026-09-10T04:26:40.732095+00:00 | 2026-09-10T04:26:40.921581+00:00 |  |  |  |  |  |  |
| c4d89d29-aa9f-4f66-9de7-00c8497ba8b8 | org-sipro | 7c197935-db63-4ab3-a7e4-7396e2ed74a7 | 84ea405b-f2df-4262-b001-7736369c16bc | A-04 | edce8b37-d810-4465-9f1a-3c994f453455 | W1-02 | Pekerjaan tanah & pondasi (galian, urugan pasir, batu belah) | struktur | 1 | 2 | 8.0 | 3 | 7 | 2026-09-05 | 2026-09-10 | 0 | 3 | W1-02-C1 Kedalaman & lebar galian sesuai gambar True pending, W1-02-C2 Urugan pasir dipadatkan dan rata  pending, W1-02-C3 Pasangan batu belah terkunci penuh, spesi mengisi rongga True pending, W1-02-C4 Tidak ada bagian pondasi yang menggantung/ambles True pending | Galian pondasi, Urugan pasir, Pasangan batu belah | site_engineer | site@sipro.co.id | project_manager | pm@sipro.co.id | ready |  |  |  |  |  |  |  |  |  | 0 | 0 | 0 | ab28705d-c2e2-4032-9cda-254ba58e2ad8 | 2026-09-10T04:26:40.732095+00:00 | 2026-09-10T04:26:40.923231+00:00 | W1-01 | True | HOLD POINT: tidak boleh lanjut sloof sebelum pondasi benar-benar terkunci (pasangan batu belah penuh, tidak ada rongga). |  |  |  |
| 7bd77fff-b23f-4a1d-9e66-f2afc8036002 | org-sipro | 7c197935-db63-4ab3-a7e4-7396e2ed74a7 | 84ea405b-f2df-4262-b001-7736369c16bc | A-04 | edce8b37-d810-4465-9f1a-3c994f453455 | W2-01 | Pembesian & bekisting sloof + kolom praktis | struktur | 2 | 3 | 6.0 | 8 | 10 | 2026-09-11 | 2026-09-14 | 2 | 3 | W2-01-C1 Diameter & jumlah besi sesuai gambar True pending, W2-01-C2 Beton decking (selimut beton) terpasang True pending, W2-01-C3 Bekisting kokoh, lurus, tidak bocor  pending | Pembesian sloof, Pembesian kolom praktis, Pemasangan bekisting | site_engineer | site@sipro.co.id | project_manager | pm@sipro.co.id | blocked |  |  |  |  |  |  |  |  |  | 0 | 0 | 0 |  | 2026-09-10T04:26:40.732095+00:00 | 2026-09-10T04:26:40.740341+00:00 | W1-02 |  |  | predecessor W1-02 'Pekerjaan tanah & pondasi (galian, urugan pasir, batu belah)' belum diverifikasi (status: blocked). | Pondasi batu kali minimal 1–2 hari sebelum sloof dikerjakan |  |
| 95f123fc-5748-4dda-97fb-bfc7e75a2bda | org-sipro | 7c197935-db63-4ab3-a7e4-7396e2ed74a7 | 84ea405b-f2df-4262-b001-7736369c16bc | A-04 | edce8b37-d810-4465-9f1a-3c994f453455 | W2-02 | Pengecoran sloof, kolom praktis & talang beton | struktur | 2 | 4 | 6.0 | 11 | 11 | 2026-09-15 | 2026-09-15 | 0 | 2 | W2-02-C1 Mutu/slump beton sesuai spesifikasi True pending, W2-02-C2 Pengecoran padat, tidak keropos/segregasi True pending, W2-02-C3 Tanggal & jam pengecoran dicatat True pending | Pengecoran sloof, Pengecoran kolom praktis, Talang beton | site_engineer | site@sipro.co.id | project_manager | pm@sipro.co.id | blocked |  |  |  |  |  |  |  |  |  | 0 | 0 | 0 |  | 2026-09-10T04:26:40.732095+00:00 | 2026-09-10T04:26:40.740713+00:00 | W2-01 |  |  | predecessor W2-01 'Pembesian & bekisting sloof + kolom praktis' belum diverifikasi (status: blocked). |  |  |
| 9ab06eec-b8b5-4f5c-b751-6df948665fad | org-sipro | 7c197935-db63-4ab3-a7e4-7396e2ed74a7 | 84ea405b-f2df-4262-b001-7736369c16bc | A-04 | edce8b37-d810-4465-9f1a-3c994f453455 | W2-03 | Curing beton & pembongkaran bekisting | struktur | 2 | 5 | 3.0 | 12 | 14 | 2026-09-16 | 2026-09-18 | 1 | 2 | W2-03-C1 Curing disiram/ditutup minimal 7 hari True pending, W2-03-C2 Tidak ada retak susut besar / keropos True pending, W2-03-C3 Tanggal pembongkaran bekisting dicatat  pending | Perawatan beton (curing), Buka bekisting samping | site_engineer | site@sipro.co.id | project_manager | pm@sipro.co.id | blocked |  |  |  |  |  |  |  |  |  | 0 | 0 | 0 |  | 2026-09-10T04:26:40.732095+00:00 | 2026-09-10T04:26:40.741051+00:00 | W2-02 | True | HOLD POINT: bekisting jangan dibuka/dibebani terlalu cepat — samping 24 jam, beban berat 7 hari, kuat optimal 28 hari. | predecessor W2-02 'Pengecoran sloof, kolom praktis & talang beton' belum diverifikasi (status: blocked). | Bekisting samping minimal 24 jam setelah pengecoran |  |
| 3644ca92-e012-43fa-b4f0-931feba7a267 | org-sipro | 7c197935-db63-4ab3-a7e4-7396e2ed74a7 | 84ea405b-f2df-4262-b001-7736369c16bc | A-04 | edce8b37-d810-4465-9f1a-3c994f453455 | W3-01 | Pasangan dinding bata merah | arsitektur | 3 | 6 | 8.0 | 15 | 21 | 2026-09-19 | 2026-09-26 | 3 | 3 | W3-01-C1 Pasangan tegak, lurus, dan siku True pending, W3-01-C2 Spesi terisi penuh (tidak ada rongga) True pending, W3-01-C3 Angkur kolom praktis terpasang tiap 6 lapis  pending | Pasangan bata merah, Kolom praktis lanjutan | site_engineer | site@sipro.co.id | project_manager | pm@sipro.co.id | blocked |  |  |  |  |  |  |  |  |  | 0 | 0 | 0 |  | 2026-09-10T04:26:40.732095+00:00 | 2026-09-10T04:26:40.741458+00:00 | W2-03 |  |  | predecessor W2-03 'Curing beton & pembongkaran bekisting' belum diverifikasi (status: blocked). | Cor sloof minimal 3–7 hari sebelum pasangan bata dimulai |  |
| a765eb04-ee80-4d0b-8b21-14ef3876d58e | org-sipro | 7c197935-db63-4ab3-a7e4-7396e2ed74a7 | 84ea405b-f2df-4262-b001-7736369c16bc | A-04 | edce8b37-d810-4465-9f1a-3c994f453455 | W3-02 | Jalur plumbing & conduit listrik tanam (sebelum plester) | mep | 3 | 7 | 4.0 | 15 | 21 | 2026-09-19 | 2026-09-26 | 0 | 3 | W3-02-C1 Jalur air diuji tekan tanpa kebocoran True pending, W3-02-C2 Conduit utuh, tidak tertekuk/pecah True pending, W3-02-C3 Foto as-built jalur diambil sebelum ditutup True pending | Jalur air bersih & kotor tanam, Conduit listrik tanam | site_engineer | site@sipro.co.id | project_manager | pm@sipro.co.id | blocked |  |  |  |  |  |  |  |  |  | 0 | 0 | 0 |  | 2026-09-10T04:26:40.732095+00:00 | 2026-09-10T04:26:40.741768+00:00 | W3-01 | True | HOLD POINT: jangan plester sebelum jalur plumbing & conduit tanam selesai, diuji, dan difoto sebagai as-built. | predecessor W3-01 'Pasangan dinding bata merah' belum diverifikasi (status: blocked). |  |  |
| 564cfd28-ca1b-464e-a3ca-2dc1ae59e04b | org-sipro | 7c197935-db63-4ab3-a7e4-7396e2ed74a7 | 84ea405b-f2df-4262-b001-7736369c16bc | A-04 | edce8b37-d810-4465-9f1a-3c994f453455 | W4-01 | Ring balok & ring gevel | struktur | 4 | 8 | 6.0 | 22 | 24 | 2026-09-28 | 2026-09-30 | 0 | 2 | W4-01-C1 Pembesian ring balk sesuai gambar True pending, W4-01-C2 Pengecoran padat & elevasi rata True pending, W4-01-C3 Angkur kuda-kuda disiapkan  pending | Pembesian & bekisting ring balk, Pengecoran ring balk, Ring gevel | site_engineer | site@sipro.co.id | project_manager | pm@sipro.co.id | blocked |  |  |  |  |  |  |  |  |  | 0 | 0 | 0 |  | 2026-09-10T04:26:40.732095+00:00 | 2026-09-10T04:26:40.742114+00:00 | W3-01, W3-02 |  |  | predecessor W3-01 'Pasangan dinding bata merah' belum diverifikasi (status: blocked)., predecessor W3-02 'Jalur plumbing & conduit listrik tanam (sebelum plester)' belum diverifikasi (status: blocked). |  |  |
| 324f1ea1-34df-48fb-bf13-915d35a675d6 | org-sipro | 7c197935-db63-4ab3-a7e4-7396e2ed74a7 | 84ea405b-f2df-4262-b001-7736369c16bc | A-04 | edce8b37-d810-4465-9f1a-3c994f453455 | W4-02 | Rangka atap baja ringan, penutup atap, lisplank | arsitektur | 4 | 9 | 8.0 | 25 | 27 | 2026-10-01 | 2026-10-03 | 3 | 4 | W4-02-C1 Jarak kuda-kuda & reng sesuai spesifikasi True pending, W4-02-C2 Sambungan/screw lengkap dan kencang  pending, W4-02-C3 Tes siram air: tidak ada kebocoran True pending, W4-02-C4 Kemiringan talang mengalir, tidak menggenang True pending | Rangka atap baja ringan, Genteng metal / atap spandek, Lisplank | site_engineer | site@sipro.co.id | project_manager | pm@sipro.co.id | blocked |  |  |  |  |  |  |  |  |  | 0 | 0 | 0 |  | 2026-09-10T04:26:40.732095+00:00 | 2026-09-10T04:26:40.742445+00:00 | W4-01 | True | HOLD POINT: jangan lanjut plafon bila atap masih bocor — wajib TES SIRAM AIR dan cek kemiringan talang. | predecessor W4-01 'Ring balok & ring gevel' belum diverifikasi (status: blocked). | Ring balok perlu mengeras minimal 3 hari sebelum dibebani rangka atap |  |
| 40b15a38-768a-4554-80fa-a5490b0853dd | org-sipro | 7c197935-db63-4ab3-a7e4-7396e2ed74a7 | 84ea405b-f2df-4262-b001-7736369c16bc | A-04 | edce8b37-d810-4465-9f1a-3c994f453455 | W5-01 | Plester dinding | arsitektur | 5 | 10 | 6.0 | 28 | 32 | 2026-10-05 | 2026-10-09 | 3 | 3 | W5-01-C1 Permukaan rata, tegak, tidak bergelombang True pending, W5-01-C2 Sudut siku dan tajam  pending, W5-01-C3 Tidak ada bagian kosong/berongga saat diketuk True pending | Plester dinding dalam, Plester dinding luar | site_engineer | site@sipro.co.id | project_manager | pm@sipro.co.id | blocked |  |  |  |  |  |  |  |  |  | 0 | 0 | 0 |  | 2026-09-10T04:26:40.732095+00:00 | 2026-09-10T04:26:40.742769+00:00 | W3-02, W4-02 |  |  | predecessor W3-02 'Jalur plumbing & conduit listrik tanam (sebelum plester)' belum diverifikasi (status: blocked)., predecessor W4-02 'Rangka atap baja ringan, penutup atap, lisplank' belum diverifikasi (status: blocked). | Mortar bata harus stabil 3–5 hari agar plester tidak retak rambut |  |
| beb7bbd1-8d04-41b1-b4ba-67bfccd3d920 | org-sipro | 7c197935-db63-4ab3-a7e4-7396e2ed74a7 | 84ea405b-f2df-4262-b001-7736369c16bc | A-04 | edce8b37-d810-4465-9f1a-3c994f453455 | W5-02 | Acian dinding | arsitektur | 5 | 11 | 4.0 | 33 | 35 | 2026-10-10 | 2026-10-13 | 3 | 2 | W5-02-C1 Acian halus, tanpa retak rambut True pending, W5-02-C2 Tidak ada bagian mengelupas / berdebu  pending | Acian dinding dalam, Acian dinding luar | site_engineer | site@sipro.co.id | project_manager | pm@sipro.co.id | blocked |  |  |  |  |  |  |  |  |  | 0 | 0 | 0 |  | 2026-09-10T04:26:40.732095+00:00 | 2026-09-10T04:26:40.743069+00:00 | W5-01 | True | HOLD POINT: jangan mengecat saat dinding masih basah — acian minimal 7–14 hari sebelum cat (risiko cat menggelembung, lembab, jamur). | predecessor W5-01 'Plester dinding' belum diverifikasi (status: blocked). | Plester perlu 2–3 hari sebelum diaci |  |
| 94bd23c0-0831-48ac-b5e7-01206b3c1d02 | org-sipro | 7c197935-db63-4ab3-a7e4-7396e2ed74a7 | 84ea405b-f2df-4262-b001-7736369c16bc | A-04 | edce8b37-d810-4465-9f1a-3c994f453455 | W6-01 | Plafon (rangka hollow, gypsum, list) | arsitektur | 6 | 12 | 5.0 | 36 | 38 | 2026-10-14 | 2026-10-16 | 0 | 2 | W6-01-C1 Rangka hollow rata & kuat (tidak melendut) True pending, W6-01-C2 Sambungan gypsum di-compound rapi  pending, W6-01-C3 List gypsum lurus & rapat ke dinding  pending | Rangka hollow, Pemasangan gypsum, List gypsum | site_engineer | site@sipro.co.id | project_manager | pm@sipro.co.id | blocked |  |  |  |  |  |  |  |  |  | 0 | 0 | 0 |  | 2026-09-10T04:26:40.732095+00:00 | 2026-09-10T04:26:40.743379+00:00 | W4-02 |  |  | predecessor W4-02 'Rangka atap baja ringan, penutup atap, lisplank' belum diverifikasi (status: blocked). |  |  |
| 6d39fa16-df01-40fd-9f0a-0ccfa3a800d6 | org-sipro | 7c197935-db63-4ab3-a7e4-7396e2ed74a7 | 84ea405b-f2df-4262-b001-7736369c16bc | A-04 | edce8b37-d810-4465-9f1a-3c994f453455 | W6-02 | Kusen, daun pintu, jendela & kaca | arsitektur | 6 | 13 | 5.0 | 39 | 41 | 2026-10-17 | 2026-10-20 | 0 | 3 | W6-02-C1 Kusen tegak, terkunci, dan tidak goyang True pending, W6-02-C2 Pintu & jendela menutup rapat, kunci berfungsi True pending, W6-02-C3 Kaca tanpa gores/retak dan sealant rapi  pending | Kusen pintu, Daun pintu, Kusen jendela, Kaca | site_engineer | site@sipro.co.id | project_manager | pm@sipro.co.id | blocked |  |  |  |  |  |  |  |  |  | 0 | 0 | 0 |  | 2026-09-10T04:26:40.732095+00:00 | 2026-09-10T04:26:40.743706+00:00 | W5-02 |  |  | predecessor W5-02 'Acian dinding' belum diverifikasi (status: blocked). |  |  |
| 549e5a95-e620-4fa3-af9b-3b88bfcec4e3 | org-sipro | 7c197935-db63-4ab3-a7e4-7396e2ed74a7 | 84ea405b-f2df-4262-b001-7736369c16bc | A-04 | edce8b37-d810-4465-9f1a-3c994f453455 | W7-01 | Keramik lantai, dinding KM & backsplash dapur | finishing | 7 | 14 | 7.0 | 42 | 45 | 2026-10-21 | 2026-10-24 | 0 | 4 | W7-01-C1 Nat lurus, seragam, dan terisi penuh True pending, W7-01-C2 Tidak kopong saat diketuk True pending, W7-01-C3 Kemiringan lantai KM mengarah ke floor drain True pending | Keramik lantai utama, Keramik kamar mandi, Keramik dinding KM, Keramik backsplash dapur | site_engineer | site@sipro.co.id | project_manager | pm@sipro.co.id | blocked |  |  |  |  |  |  |  |  |  | 0 | 0 | 0 |  | 2026-09-10T04:26:40.732095+00:00 | 2026-09-10T04:26:40.744095+00:00 | W5-02, W6-01 |  |  | predecessor W5-02 'Acian dinding' belum diverifikasi (status: blocked)., predecessor W6-01 'Plafon (rangka hollow, gypsum, list)' belum diverifikasi (status: blocked). |  |  |
| d5a4024b-0b6b-4237-a7b4-5e0eda40731a | org-sipro | 7c197935-db63-4ab3-a7e4-7396e2ed74a7 | 84ea405b-f2df-4262-b001-7736369c16bc | A-04 | edce8b37-d810-4465-9f1a-3c994f453455 | W7-02 | Sanitasi & jalur air bersih (closet, kran, sink, septictank) | mep | 7 | 15 | 5.0 | 46 | 47 | 2026-10-26 | 2026-10-27 | 1 | 3 | W7-02-C1 Tes aliran air lancar di semua titik True pending, W7-02-C2 Tidak ada kebocoran pada sambungan True pending, W7-02-C3 Septictank & resapan sesuai spesifikasi  pending | Closet, Kran, Sink dapur, Septictank & resapan, Jalur air bersih | site_engineer | site@sipro.co.id | project_manager | pm@sipro.co.id | blocked |  |  |  |  |  |  |  |  |  | 0 | 0 | 0 |  | 2026-09-10T04:26:40.732095+00:00 | 2026-09-10T04:26:40.744391+00:00 | W7-01 |  |  | predecessor W7-01 'Keramik lantai, dinding KM & backsplash dapur' belum diverifikasi (status: blocked). | Nat keramik harus kering sebelum pemasangan sanitair |  |
| ad4e1550-bd60-4795-949e-c1143e634a7c | org-sipro | 7c197935-db63-4ab3-a7e4-7396e2ed74a7 | 84ea405b-f2df-4262-b001-7736369c16bc | A-04 | edce8b37-d810-4465-9f1a-3c994f453455 | W8-01 | Instalasi listrik (lampu, saklar, stop kontak) | mep | 8 | 16 | 4.0 | 48 | 50 | 2026-10-28 | 2026-10-30 | 0 | 3 | W8-01-C1 Semua titik diuji dan menyala True pending, W8-01-C2 Tidak ada kabel terbuka / sambungan liar True pending, W8-01-C3 MCB & grounding sesuai spesifikasi True pending | Lampu, Saklar, Stop kontak, Pengujian titik | site_engineer | site@sipro.co.id | project_manager | pm@sipro.co.id | blocked |  |  |  |  |  |  |  |  |  | 0 | 0 | 0 |  | 2026-09-10T04:26:40.732095+00:00 | 2026-09-10T04:26:40.744710+00:00 | W3-02, W6-01 |  |  | predecessor W3-02 'Jalur plumbing & conduit listrik tanam (sebelum plester)' belum diverifikasi (status: blocked)., predecessor W6-01 'Plafon (rangka hollow, gypsum, list)' belum diverifikasi (status: blocked). |  |  |
| 81c9403c-2619-4eb2-9e99-6ec5ee71be5e | org-sipro | 7c197935-db63-4ab3-a7e4-7396e2ed74a7 | 84ea405b-f2df-4262-b001-7736369c16bc | A-04 | edce8b37-d810-4465-9f1a-3c994f453455 | W8-02 | Pengecatan interior, eksterior, plafon & lisplank | finishing | 8 | 17 | 5.0 | 51 | 53 | 2026-10-31 | 2026-11-03 | 7 | 3 | W8-02-C1 Dinding kering saat diuji kelembaban True pending, W8-02-C2 Cat rata minimal 2 lapis, tidak belang True pending, W8-02-C3 Tidak ada cipratan pada kusen/keramik  pending | Cat interior, Cat eksterior, Cat plafon, Cat lisplank | site_engineer | site@sipro.co.id | project_manager | pm@sipro.co.id | blocked |  |  |  |  |  |  |  |  |  | 0 | 0 | 0 |  | 2026-09-10T04:26:40.732095+00:00 | 2026-09-10T04:26:40.745103+00:00 | W5-02, W6-01 | True | HOLD POINT: dinding wajib kering (uji lembab) sebelum cat dasar. | predecessor W5-02 'Acian dinding' belum diverifikasi (status: blocked)., predecessor W6-01 'Plafon (rangka hollow, gypsum, list)' belum diverifikasi (status: blocked). | Acian minimal 7–14 hari agar dinding kering sebelum dicat |  |
| dcdd98f9-f2ba-4291-a1de-d1f0d0e56bf7 | org-sipro | 7c197935-db63-4ab3-a7e4-7396e2ed74a7 | 84ea405b-f2df-4262-b001-7736369c16bc | A-04 | edce8b37-d810-4465-9f1a-3c994f453455 | W8-03 | Pekerjaan luar (carport, dinding samping, taman) | lansekap | 8 | 18 | 3.0 | 54 | 54 | 2026-11-04 | 2026-11-04 | 0 | 2 | W8-03-C1 Carport rata, air tidak menggenang True pending, W8-03-C2 Area luar bersih dan rapi  pending | Carport, Dinding samping, Taman | site_engineer | site@sipro.co.id | project_manager | pm@sipro.co.id | blocked |  |  |  |  |  |  |  |  |  | 0 | 0 | 0 |  | 2026-09-10T04:26:40.732095+00:00 | 2026-09-10T04:26:40.745432+00:00 | W8-02 |  |  | predecessor W8-02 'Pengecatan interior, eksterior, plafon & lisplank' belum diverifikasi (status: blocked). |  |  |
| 06b519f0-6254-4738-8753-c9ae3a052445 | org-sipro | 7c197935-db63-4ab3-a7e4-7396e2ed74a7 | 84ea405b-f2df-4262-b001-7736369c16bc | A-04 | edce8b37-d810-4465-9f1a-3c994f453455 | W9-01 | Pembersihan akhir & perbaikan defect | finishing | 9 | 19 | 3.0 | 55 | 58 | 2026-11-05 | 2026-11-09 | 0 | 3 | W9-01-C1 Semua temuan punch list sudah ditutup True pending, W9-01-C2 Bebas sisa material & puing True pending | Pembersihan akhir, Repair defect / punch list | site_engineer | site@sipro.co.id | project_manager | pm@sipro.co.id | blocked |  |  |  |  |  |  |  |  |  | 0 | 0 | 0 |  | 2026-09-10T04:26:40.732095+00:00 | 2026-09-10T04:26:40.745763+00:00 | W8-01, W8-02, W8-03 |  |  | predecessor W8-01 'Instalasi listrik (lampu, saklar, stop kontak)' belum diverifikasi (status: blocked)., predecessor W8-02 'Pengecatan interior, eksterior, plafon & lisplank' belum diverifikasi (status: blocked)., predecessor W8-03 'Pekerjaan luar (carport, dinding samping, taman)' belum diverifikasi (status: blocked). |  |  |
| 2d620d8c-290b-4f46-8e2f-4dd3a328bd51 | org-sipro | 7c197935-db63-4ab3-a7e4-7396e2ed74a7 | 84ea405b-f2df-4262-b001-7736369c16bc | A-04 | edce8b37-d810-4465-9f1a-3c994f453455 | W9-02 | Final QC & siap akad / serah terima | finishing | 9 | 20 | 2.0 | 59 | 60 | 2026-11-10 | 2026-11-11 | 0 | 4 | W9-02-C1 Air & listrik berfungsi normal True pending, W9-02-C2 Tidak ada kebocoran atap/plumbing True pending, W9-02-C3 Kunci, dokumen, dan manual siap diserahkan True pending, W9-02-C4 Pembeli/QC menandatangani hasil final  pending | Final QC, Serah terima kunci & dokumen | site_engineer | site@sipro.co.id | project_manager | pm@sipro.co.id | blocked |  |  |  |  |  |  |  |  |  | 0 | 0 | 0 |  | 2026-09-10T04:26:40.732095+00:00 | 2026-09-10T04:26:40.746062+00:00 | W9-01 | True | HOLD POINT: unit tidak boleh dinyatakan siap serah terima sebelum Final QC lulus (air, listrik, bocor, kunci, dokumen). | predecessor W9-01 'Pembersihan akhir & perbaikan defect' belum diverifikasi (status: blocked). |  | True |

Links (id, org_id, platform, campaign_id, adset_id, ad_id, date, spend, impressions, clicks, leads_platform, currency, campaign_name, adset_name, ad_name, campaign_external_id, source, import_id, created_by, created_at, updated_by, updated_at, revisions, history, demo_batch):
- 0b7afacb-c6ec-400a-890c-9cd46e94663f org-sipro google 0f4ad0a8-6b87-4c46-b6b3-60124f3042f4 2026-09-06 975000 14700 293 3 IDR harmony-google-brand 9911002233 manual seed 2026-09-10T04:26:41.623372+00:00 seed 2026-09-10T04:26:41.623372+00:00 0 fase43
- 7a2deda1-d5a7-4f1c-bcd7-ac406958e70c org-sipro google 0f4ad0a8-6b87-4c46-b6b3-60124f3042f4 2026-09-07 920000 13800 282 5 IDR harmony-google-brand 9911002233 manual seed 2026-09-10T04:26:41.622030+00:00 seed 2026-09-10T04:26:41.622030+00:00 0 fase43
- f6fa3038-1e4c-4f0b-aa80-2b1ddee66efc org-sipro google 0f4ad0a8-6b87-4c46-b6b3-60124f3042f4 2026-09-08 865000 12900 271 4 IDR harmony-google-brand 9911002233 manual seed 2026-09-10T04:26:41.621107+00:00 seed 2026-09-10T04:26:41.621107+00:00 0 fase43
- 0e799699-76ed-4eae-bc59-9b58128cf2b3 org-sipro google 0f4ad0a8-6b87-4c46-b6b3-60124f3042f4 2026-09-09 810000 12000 260 3 IDR harmony-google-brand 9911002233 manual seed 2026-09-10T04:26:41.620141+00:00 seed 2026-09-10T04:26:41.620141+00:00 0 fase43
- 6f46813d-032a-47e9-a05f-ba4816d2800e org-sipro meta 87bdeaf6-8a0f-4cd5-aee0-5cf694357440 2026-09-02 1615000 13800 260 4 IDR cluster-a-meta 23851000000001 manual seed 2026-09-10T04:26:41.616731+00:00 seed 2026-09-10T04:26:41.616731+00:00 0 fase43
- bb12e440-6988-4cc6-92a6-cb0db8821aa9 org-sipro meta 87bdeaf6-8a0f-4cd5-aee0-5cf694357440 2026-09-03 1560000 12900 326 3 IDR cluster-a-meta 23851000000001 manual seed 2026-09-10T04:26:41.615603+00:00 seed 2026-09-10T04:26:41.615603+00:00 0 fase43
- 9c754390-5fd9-4fb6-b862-1d9d21929cab org-sipro meta 87bdeaf6-8a0f-4cd5-aee0-5cf694357440 2026-09-04 1505000 12000 315 5 IDR cluster-a-meta 23851000000001 manual seed 2026-09-10T04:26:41.614422+00:00 seed 2026-09-10T04:26:41.614422+00:00 0 fase43
- 502ba413-ac3d-498c-a3bd-165aae04e7e7 org-sipro meta 87bdeaf6-8a0f-4cd5-aee0-5cf694357440 2026-09-05 1450000 15600 304 4 IDR cluster-a-meta 23851000000001 manual seed 2026-09-10T04:26:41.612800+00:00 seed 2026-09-10T04:26:41.612800+00:00 0 fase43
- 9fb3c49d-d84f-4c10-a127-508cc84604fc org-sipro meta 87bdeaf6-8a0f-4cd5-aee0-5cf694357440 2026-09-06 1615000 14700 293 3 IDR cluster-a-meta 23851000000001 manual seed 2026-09-10T04:26:41.552563+00:00 seed 2026-09-10T04:26:41.552563+00:00 0 fase43
- de6829f8-e7e3-4d83-99ee-92bed44806eb org-sipro meta 87bdeaf6-8a0f-4cd5-aee0-5cf694357440 2026-09-07 1560000 13800 282 5 IDR cluster-a-meta 23851000000001 manual seed 2026-09-10T04:26:41.551321+00:00 seed 2026-09-10T04:26:41.551321+00:00 0 fase43
- 9b0f2fbb-6073-4de7-ba89-7047df6ba2af org-sipro meta 87bdeaf6-8a0f-4cd5-aee0-5cf694357440 2026-09-08 1505000 12900 271 4 IDR cluster-a-meta 23851000000001 manual seed 2026-09-10T04:26:41.549995+00:00 seed 2026-09-10T04:26:41.549995+00:00 0 fase43
- 8d559a42-96c7-4c63-8bf8-dc3f6e3c7511 org-sipro meta 87bdeaf6-8a0f-4cd5-aee0-5cf694357440 2026-09-09 1450000 12000 260 3 IDR cluster-a-meta 23851000000001 manual seed 2026-09-10T04:26:41.548660+00:00 seed 2026-09-10T04:26:41.548660+00:00 0 fase43
